# lab1_1

Schedule from MS Project, 2021-03-01 to 2021-08-03, costs in ₽.
Команда -- 16 человек / Длительность -- 6 месяцев / Бюджет -- 50 000 рублей

## Calendars

- Standard: Mon-Fri 08:00-12:00, 13:00-17:00; Sat-Sun off. Exceptions (off unless hours are given): 2021-03-08 (8 марта), 2021-05-03 (Перенос Праздник Весны и Труда), 2021-05-10 (Перенос День Победы), 2021-06-14 (Перенос День России).

## Resources

| Resource | Group | Rate | Cost per use |
| --- | --- | --- | --- |
| Ведущий программист | Программирование | 10 | 100 |
| Программист#1 | Программирование | 7 | 50 |
| Программист#2 | Программирование | 7 | 50 |
| Программист#3 | Программирование | 7 | 50 |
| Программист#4 | Программирование | 7 | 50 |
| Системный аналитик | Анализ | 20 | 300 |
| Художник-дизайнер | Дизайн | 8 | 70 |
| Технический писатель | Документация | 5 | 20 |
| Web-дизайнер | Internet | 7 | 50 |
| 3D аниматор | Дизайн | 8 | 70 |
| Мультимедиа-корреспондент | М-Медиа | 3 | 20 |
| Наборщик данных#1 | Ввод данных | 2 | 10 |
| Наборщик данных#2 | Ввод данных | 2 | 10 |
| Наборщик данных#3 | Ввод данных | 2 | 10 |
| Наборщик данных#4 | Ввод данных | 2 | 10 |
| Наборщик данных#5 | Ввод данных | 2 | 10 |
| Дополнительный сервер | Оборудование | 2 |  |

## Schedule

| ID | WBS | Task | Type | Duration | Start | Finish | Predecessors | Total slack | Free slack | Resources | Work | Cost |
| --- | --- | --- | --- | --- | --- | --- | --- | --- | --- | --- | --- | --- |
| 1 | 1 | Начало проекта | milestone | 0w | 2021-03-01 | 2021-03-01 |  | 106d | 0d |  |  |  |
| 2 | 2 | **Анализ** |  | 25d | 2021-03-01 | 2021-04-06 |  | 0d |  |  | 320h | 5,900 |
| 3 | 2.1 | Анализ и проектирование ядра |  | 3w | 2021-03-01 | 2021-03-23 |  | 0d |  | Ведущий программист; Системный аналитик | 240h | 4,000 |
| 4 | 2.2 | Анализ и построение структуры базы объектов |  | 2w | 2021-03-23 | 2021-04-06 |  | 7d | 0d | Системный аналитик | 80h | 1,900 |
| 5 | 3 | **Разработка** |  | 40d | 2021-03-01 | 2021-04-27 |  | 15d |  |  | 743h | 6,801 |
| 6 | 3.1 | Разработка 2D графических элементов |  | 3w | 2021-03-01 | 2021-03-23 |  | 76d | 0d | Художник-дизайнер | 120h | 1,030 |
| 7 | 3.2 | Разработка 3D графических элементов |  | 2w | 2021-03-01 | 2021-03-16 | 6SS | 76d | 0d | 3D аниматор | 80h | 710 |
| 8 | 3.3 | Создание модели ядра |  | 5w | 2021-03-23 | 2021-04-27 | 3 | 0d |  | Ведущий программист; Программист#2 | 400h | 3,550 |
| 9 | 3.4 | Разработка дизайна руководства |  | 1w | 2021-03-23 | 2021-03-30 |  | 69d | 0d | Художник-дизайнер | 40h | 390 |
| 10 | 3.5 | Разработка структуры сайта |  | 1d | 2021-03-25 | 2021-03-26 | 26SS | 69d | 0d | Web-дизайнер | 8h | 106 |
| 11 | 3.6 | Разработка дизайна сайта |  | 1w | 2021-03-26 | 2021-04-02 | 10 | 69d | 0d | 3D аниматор; Web-дизайнер; Художник-дизайнер [250%] | 95h | 1,015 |
| 12 | 4 | **Программирование** |  | 107d | 2021-03-01 | 2021-08-03 |  | 0d |  |  | 1704h | 15,622 |
| 13 | 4.1 | Создание заставки |  | 3w | 2021-03-16 | 2021-04-14 | 7 | 76d |  | 3D аниматор | 120h | 1,030 |
| 14 | 4.2 | Программирование интерфейса |  | 3w | 2021-03-01 | 2021-03-23 |  | 51.88d | 0d | Программист#3; Программист#4 | 240h | 2,780 |
| 15 | 4.3 | Программирование средств обработки базы объектов |  | 3w | 2021-04-06 | 2021-04-27 | 4 | 7d | 0d | Программист#3; Программист#4 | 240h | 1,780 |
| 16 | 4.4 | Создание рабочей версии ядра |  | 10w | 2021-05-18 | 2021-08-03 | 22 | 0d |  | Ведущий программист; Программист#1; Программист#2 | 1104h | 10,032 |
| 17 | 5 | **Наполнение** |  | 100d | 2021-03-01 | 2021-07-23 |  | 7d |  |  | 2760h | 7,480 |
| 18 | 5.1 | Наполнение базы объектов |  | 12w | 2021-04-27 | 2021-07-23 | 15 | 7d |  | Наборщик данных#1; Наборщик данных#2; Наборщик данных#3; Наборщик данных#4; Наборщик данных#5 | 2400h | 5,850 |
| 19 | 5.2 | Наполнение сайта |  | 3w | 2021-04-02 | 2021-04-23 | 11 | 69d |  | Web-дизайнер | 120h | 890 |
| 20 | 5.3 | Создание мультимедиа – наполнения |  | 6w | 2021-03-01 | 2021-04-13 |  | 77d |  | Мультимедиа-корреспондент | 240h | 740 |
| 21 | 6 | **Тестирование** |  | 24d | 2021-04-13 | 2021-05-19 |  | 10d |  |  | 312h | 2,674 |
| 22 | 6.1 | Тестирование модели ядра |  | 1w | 2021-04-27 | 2021-05-05 | 8 | 0d |  | Программист#1 | 40h | 330 |
| 23 | 6.2 | Тестирование сайта |  | 4w | 2021-04-13 | 2021-05-19 |  | 53d | 0d | Ведущий программист; Программист#1; Программист#2 | 272h | 2,344 |
| 24 | 7 | **Документация** |  | 40d | 2021-03-25 | 2021-05-24 |  | 50d |  |  | 200h | 1,040 |
| 25 | 7.1 | Создание справочной системы |  | 2w | 2021-05-07 | 2021-05-24 | 14 | 50d |  | Технический писатель | 80h | 420 |
| 26 | 7.2 | Написание руководства пользователя |  | 3w | 2021-03-25 | 2021-04-15 | 9SS+2d | 69d | 0d | Технический писатель | 120h | 620 |
| 27 | 8 | Разработка дизайна интерфейса |  | 1d | 2021-03-01 | 2021-03-02 | 1 | 106d |  |  |  | 1,000 |
| 28 | 9 | Сдача сайта в эксплуатацию | milestone | 0w | 2021-05-19 | 2021-05-19 | 23 | 53d |  |  |  |  |
