# lab1_1

Schedule from MS Project, 2021-03-01 to 2021-08-03, costs in ₽.
Команда -- 16 человек / Длительность -- 6 месяцев / Бюджет -- 50 000 рублей

## Calendars

- Standard: Mon-Fri 08:00-12:00, 13:00-17:00; Sat-Sun off. Exceptions (off unless hours are given): 2021-03-08 (8 марта), 2021-05-03 (Перенос Праздник Весны и Труда), 2021-05-10 (Перенос День Победы), 2021-06-14 (Перенос День России).

## Resources

| Resource | Group | Rate | Cost per use |
| --- | --- | --- | --- |
| Ведущий программист | Программирование | 10 | 100 |
| Программист#1 | Программирование | 7 | 50 |
| Программист#2 | Программирование | 7 | 50 |
| Программист#3 | Программирование | 7 | 50 |
| Программист#4 | Программирование | 7 | 50 |
| Системный аналитик | Анализ | 20 | 300 |
| Художник-дизайнер | Дизайн | 8 | 70 |
| Технический писатель | Документация | 5 | 20 |
| Web-дизайнер | Internet | 7 | 50 |
| 3D аниматор | Дизайн | 8 | 70 |
| Мультимедиа-корреспондент | М-Медиа | 3 | 20 |
| Наборщик данных#1 | Ввод данных | 2 | 10 |
| Наборщик данных#2 | Ввод данных | 2 | 10 |
| Наборщик данных#3 | Ввод данных | 2 | 10 |
| Наборщик данных#4 | Ввод данных | 2 | 10 |
| Наборщик данных#5 | Ввод данных | 2 | 10 |
| Дополнительный сервер | Оборудование | 2 |  |

## Schedule

| ID | WBS | Task | Type | Duration | Start | Finish | Predecessors | Total slack | Free slack | Resources | Work | Cost |
| --- | --- | --- | --- | --- | --- | --- | --- | --- | --- | --- | --- | --- |
| 1 | 1 | Начало проекта | milestone | 0w | 2021-03-01 09:00 | 2021-03-01 09:00 |  | 107.38d |  |  |  |  |
| 2 | 2 | **Анализ** |  | 25.62d | 2021-03-01 09:00 | 2021-04-06 15:00 |  | 0d |  |  | 320h | 5,900 |
| 3 | 2.1 | Анализ и проектирование ядра |  | 3w | 2021-03-01 09:00 | 2021-03-23 12:00 |  | 0d |  | Ведущий программист; Системный аналитик | 240h | 4,000 |
| 4 | 2.2 | Анализ и построение структуры базы объектов |  | 2w | 2021-03-23 13:00 | 2021-04-06 15:00 |  | 6.75d | 0d | Системный аналитик | 80h | 1,900 |
| 5 | 3 | **Разработка** |  | 40.38d | 2021-03-01 09:00 | 2021-04-27 12:00 |  | 15.38d |  |  | 738h | 6,751 |
| 6 | 3.1 | Разработка 2D графических элементов |  | 3w | 2021-03-01 09:00 | 2021-04-06 14:00 |  | 75.62d | 0d | Художник-дизайнер | 120h | 1,030 |
| 7 | 3.2 | Разработка 3D графических элементов |  | 2w | 2021-03-01 09:00 | 2021-03-16 11:00 | 6SS | 75.62d | 0d | 3D аниматор | 80h | 710 |
| 8 | 3.3 | Создание модели ядра |  | 5w | 2021-03-23 13:00 | 2021-04-27 12:00 | 3 | 0d |  | Ведущий программист; Программист#2 | 395h | 3,500 |
| 9 | 3.4 | Разработка дизайна руководства |  | 1w | 2021-03-23 09:00 | 2021-03-30 10:00 |  | 68.88d | 0d | Художник-дизайнер | 40h | 390 |
| 10 | 3.5 | Разработка структуры сайта |  | 1d | 2021-03-25 09:00 | 2021-03-26 09:00 | 26SS | 68.88d | 0d | Web-дизайнер | 8h | 106 |
| 11 | 3.6 | Разработка дизайна сайта |  | 1w | 2021-03-26 09:00 | 2021-04-02 10:00 | 10 | 68.88d | 0d | 3D аниматор; Web-дизайнер; Художник-дизайнер [250%] | 95h | 1,015 |
| 12 | 4 | **Программирование** |  | 107.38d | 2021-03-01 09:00 | 2021-08-03 12:00 |  | 0d |  |  | 1698h | 15,562 |
| 13 | 4.1 | Создание заставки |  | 3w | 2021-03-16 11:00 | 2021-04-14 16:00 | 7 | 75.62d |  | 3D аниматор | 120h | 1,030 |
| 14 | 4.2 | Программирование интерфейса |  | 3w | 2021-03-01 09:00 | 2021-03-23 09:00 |  | 51.88d | 0d | Программист#3; Программист#4 | 240h | 2,780 |
| 15 | 4.3 | Программирование средств обработки базы объектов |  | 3w | 2021-04-06 15:00 | 2021-04-27 15:00 | 4 | 6.75d | 0d | Программист#3; Программист#4 | 240h | 1,780 |
| 16 | 4.4 | Создание рабочей версии ядра |  | 10w | 2021-05-18 13:00 | 2021-08-03 12:00 | 22 | 0d |  | Ведущий программист; Программист#1; Программист#2 | 1098h | 9,972 |
| 17 | 5 | **Наполнение** |  | 100.62d | 2021-03-01 09:00 | 2021-07-23 15:00 |  | 6.75d |  |  | 2760h | 7,480 |
| 18 | 5.1 | Наполнение базы объектов |  | 12w | 2021-04-27 15:00 | 2021-07-23 15:00 | 15 | 6.75d |  | Наборщик данных#1; Наборщик данных#2; Наборщик данных#3; Наборщик данных#4; Наборщик данных#5 | 2400h | 5,850 |
| 19 | 5.2 | Наполнение сайта |  | 3w | 2021-04-02 10:00 | 2021-04-23 14:00 | 11 | 68.88d |  | Web-дизайнер | 120h | 890 |
| 20 | 5.3 | Создание мультимедиа – наполнения |  | 6w | 2021-03-01 09:00 | 2021-04-13 16:00 |  | 76.62d |  | Мультимедиа-корреспондент | 240h | 740 |
| 21 | 6 | **Тестирование** |  | 24d | 2021-04-13 09:00 | 2021-05-19 09:00 |  | 10.38d |  |  | 310h | 2,654 |
| 22 | 6.1 | Тестирование модели ядра |  | 1w | 2021-04-27 13:00 | 2021-05-05 12:00 | 8 | 0d |  | Программист#1 | 40h | 330 |
| 23 | 6.2 | Тестирование сайта |  | 4w | 2021-04-13 09:00 | 2021-05-19 09:00 |  | 53.38d | 0d | Ведущий программист; Программист#1; Программист#2 | 270h | 2,324 |
| 24 | 7 | **Документация** |  | 40.25d | 2021-03-25 09:00 | 2021-05-24 11:00 |  | 50.12d |  |  | 200h | 1,040 |
| 25 | 7.1 | Создание справочной системы |  | 2w | 2021-05-07 09:00 | 2021-05-24 11:00 | 14 | 50.12d |  | Технический писатель | 80h | 420 |
| 26 | 7.2 | Написание руководства пользователя |  | 3w | 2021-03-25 09:00 | 2021-04-15 12:00 | 9SS+2d | 68.88d | 0d | Технический писатель | 120h | 620 |
| 27 | 8 | Сдача сайта в эксплуатацию | milestone | 0w | 2021-05-19 09:00 | 2021-05-19 09:00 | 23 | 53.38d |  |  |  |  |

| ID | WBS | Task | Duration | Start | Finish | Total slack | Constraint | Resources | Work | Cost |
| --- | --- | --- | --- | --- | --- | --- | --- | --- | --- | --- |
| 28 | 9 | **Еженедельное совещание** | 101.12d | 2021-03-03 09:00 | 2021-07-28 10:00 | 4.25d |  |  | 154h | 1,342 |
| 29 | 9.1 | Еженедельное совещание 1 | 1h | 2021-03-03 09:00 | 2021-03-03 10:00 | 105.25d | start no earlier than 2021-03-03 09:00 | 3D аниматор; Web-дизайнер; Ведущий программист; Мультимедиа-корреспондент; Системный аналитик; Технический писатель; Художник-дизайнер | 7h | 61 |
| 30 | 9.2 | Еженедельное совещание 2 | 1h | 2021-03-10 09:00 | 2021-03-10 10:00 | 101.25d | start no earlier than 2021-03-10 09:00 | 3D аниматор; Web-дизайнер; Ведущий программист; Мультимедиа-корреспондент; Системный аналитик; Технический писатель; Художник-дизайнер | 7h | 61 |
| 31 | 9.3 | Еженедельное совещание 3 | 1h | 2021-03-17 09:00 | 2021-03-17 10:00 | 96.25d | start no earlier than 2021-03-17 09:00 | 3D аниматор; Web-дизайнер; Ведущий программист; Мультимедиа-корреспондент; Системный аналитик; Технический писатель; Художник-дизайнер | 7h | 61 |
| 32 | 9.4 | Еженедельное совещание 4 | 1h | 2021-03-24 09:00 | 2021-03-24 10:00 | 91.25d | start no earlier than 2021-03-24 09:00 | 3D аниматор; Web-дизайнер; Ведущий программист; Мультимедиа-корреспондент; Системный аналитик; Технический писатель; Художник-дизайнер | 7h | 61 |
| 33 | 9.5 | Еженедельное совещание 5 | 1h | 2021-03-31 09:00 | 2021-03-31 10:00 | 86.25d | start no earlier than 2021-03-31 09:00 | 3D аниматор; Web-дизайнер; Ведущий программист; Мультимедиа-корреспондент; Системный аналитик; Технический писатель; Художник-дизайнер | 7h | 61 |
| 34 | 9.6 | Еженедельное совещание 6 | 1h | 2021-04-07 09:00 | 2021-04-07 10:00 | 81.25d | start no earlier than 2021-04-07 09:00 | 3D аниматор; Web-дизайнер; Ведущий программист; Мультимедиа-корреспондент; Системный аналитик; Технический писатель; Художник-дизайнер | 7h | 61 |
| 35 | 9.7 | Еженедельное совещание 7 | 1h | 2021-04-14 09:00 | 2021-04-14 10:00 | 76.25d | start no earlier than 2021-04-14 09:00 | 3D аниматор; Web-дизайнер; Ведущий программист; Мультимедиа-корреспондент; Системный аналитик; Технический писатель; Художник-дизайнер | 7h | 61 |
| 36 | 9.8 | Еженедельное совещание 8 | 1h | 2021-04-21 09:00 | 2021-04-21 10:00 | 71.25d | start no earlier than 2021-04-21 09:00 | 3D аниматор; Web-дизайнер; Ведущий программист; Мультимедиа-корреспондент; Системный аналитик; Технический писатель; Художник-дизайнер | 7h | 61 |
| 37 | 9.9 | Еженедельное совещание 9 | 1h | 2021-04-28 09:00 | 2021-04-28 10:00 | 66.25d | start no earlier than 2021-04-28 09:00 | 3D аниматор; Web-дизайнер; Ведущий программист; Мультимедиа-корреспондент; Системный аналитик; Технический писатель; Художник-дизайнер | 7h | 61 |
| 38 | 9.10 | Еженедельное совещание 10 | 1h | 2021-05-05 09:00 | 2021-05-05 10:00 | 62.25d | start no earlier than 2021-05-05 09:00 | 3D аниматор; Web-дизайнер; Ведущий программист; Мультимедиа-корреспондент; Системный аналитик; Технический писатель; Художник-дизайнер | 7h | 61 |
| 39 | 9.11 | Еженедельное совещание 11 | 1h | 2021-05-12 09:00 | 2021-05-12 10:00 | 58.25d | start no earlier than 2021-05-12 09:00 | 3D аниматор; Web-дизайнер; Ведущий программист; Мультимедиа-корреспондент; Системный аналитик; Технический писатель; Художник-дизайнер | 7h | 61 |
| 40 | 9.12 | Еженедельное совещание 12 | 1h | 2021-05-19 09:00 | 2021-05-19 10:00 | 53.25d | start no earlier than 2021-05-19 09:00 | 3D аниматор; Web-дизайнер; Ведущий программист; Мультимедиа-корреспондент; Системный аналитик; Технический писатель; Художник-дизайнер | 7h | 61 |
| 41 | 9.13 | Еженедельное совещание 13 | 1h | 2021-05-26 09:00 | 2021-05-26 10:00 | 48.25d | start no earlier than 2021-05-26 09:00 | 3D аниматор; Web-дизайнер; Ведущий программист; Мультимедиа-корреспондент; Системный аналитик; Технический писатель; Художник-дизайнер | 7h | 61 |
| 42 | 9.14 | Еженедельное совещание 14 | 1h | 2021-06-02 09:00 | 2021-06-02 10:00 | 43.25d | start no earlier than 2021-06-02 09:00 | 3D аниматор; Web-дизайнер; Ведущий программист; Мультимедиа-корреспондент; Системный аналитик; Технический писатель; Художник-дизайнер | 7h | 61 |
| 43 | 9.15 | Еженедельное совещание 15 | 1h | 2021-06-09 09:00 | 2021-06-09 10:00 | 38.25d | start no earlier than 2021-06-09 09:00 | 3D аниматор; Web-дизайнер; Ведущий программист; Мультимедиа-корреспондент; Системный аналитик; Технический писатель; Художник-дизайнер | 7h | 61 |
| 44 | 9.16 | Еженедельное совещание 16 | 1h | 2021-06-16 09:00 | 2021-06-16 10:00 | 34.25d | start no earlier than 2021-06-16 09:00 | 3D аниматор; Web-дизайнер; Ведущий программист; Мультимедиа-корреспондент; Системный аналитик; Технический писатель; Художник-дизайнер | 7h | 61 |
| 45 | 9.17 | Еженедельное совещание 17 | 1h | 2021-06-23 09:00 | 2021-06-23 10:00 | 29.25d | start no earlier than 2021-06-23 09:00 | 3D аниматор; Web-дизайнер; Ведущий программист; Мультимедиа-корреспондент; Системный аналитик; Технический писатель; Художник-дизайнер | 7h | 61 |
| 46 | 9.18 | Еженедельное совещание 18 | 1h | 2021-06-30 09:00 | 2021-06-30 10:00 | 24.25d | start no earlier than 2021-06-30 09:00 | 3D аниматор; Web-дизайнер; Ведущий программист; Мультимедиа-корреспондент; Системный аналитик; Технический писатель; Художник-дизайнер | 7h | 61 |
| 47 | 9.19 | Еженедельное совещание 19 | 1h | 2021-07-07 09:00 | 2021-07-07 10:00 | 19.25d | start no earlier than 2021-07-07 09:00 | 3D аниматор; Web-дизайнер; Ведущий программист; Мультимедиа-корреспондент; Системный аналитик; Технический писатель; Художник-дизайнер | 7h | 61 |
| 48 | 9.20 | Еженедельное совещание 20 | 1h | 2021-07-14 09:00 | 2021-07-14 10:00 | 14.25d | start no earlier than 2021-07-14 09:00 | 3D аниматор; Web-дизайнер; Ведущий программист; Мультимедиа-корреспондент; Системный аналитик; Технический писатель; Художник-дизайнер | 7h | 61 |
| 49 | 9.21 | Еженедельное совещание 21 | 1h | 2021-07-21 09:00 | 2021-07-21 10:00 | 9.25d | start no earlier than 2021-07-21 09:00 | 3D аниматор; Web-дизайнер; Ведущий программист; Мультимедиа-корреспондент; Системный аналитик; Технический писатель; Художник-дизайнер | 7h | 61 |
| 50 | 9.22 | Еженедельное совещание 22 | 1h | 2021-07-28 09:00 | 2021-07-28 10:00 | 4.25d | start no earlier than 2021-07-28 09:00 | 3D аниматор; Web-дизайнер; Ведущий программист; Мультимедиа-корреспондент; Системный аналитик; Технический писатель; Художник-дизайнер | 7h | 61 |
