# rk1_1

Schedule from MS Project, 2021-04-05 to 2021-07-27, status date 2021-05-31, costs in ₽, A marks actual dates.

## Calendars

- Standard: Mon-Fri 08:00-12:00, 13:00-17:00; Sat-Sun off. Exceptions (off unless hours are given): 2021-05-03 (Праздник), 2021-05-10 (Праздник), 2021-06-14 (Праздник).

## Resources

| Resource | Group | Unit | Rate | Cost per use |
| --- | --- | --- | --- | --- |
| Аналитик |  |  | 500 | 5000 |
| Ведущий программист | Программисты |  | 437.5 | 3000 |
| Программист 1 | Программирование |  | 312.5 | 2000 |
| Программист 2 | Программирование |  | 312.5 | 2000 |
| Программист 3 | Программирование |  | 312.5 | 2000 |
| Технический писатель |  |  | 250 | 1500 |
| Наборщики данных | Технический персонал |  | 218.75 | 1000 |
| Сервер базы данных | Оборудование |  | 25000 | 10000 |
| Картриджи для принтера | Расходные материалы | шт | 2500 |  |
| Бумага | Расходные материалы | пач | 200 |  |
| Специалист для выполнения профилактических работ |  |  |  | 3000 |

## Schedule

| ID | WBS | Task | Type | Duration | Start | Finish | Predecessors | Complete | Remaining | Baseline start | Baseline finish | Baseline duration | Total slack | Free slack | Constraint | Resources | Work | Actual work | Cost | Baseline cost | Actual cost |
| --- | --- | --- | --- | --- | --- | --- | --- | --- | --- | --- | --- | --- | --- | --- | --- | --- | --- | --- | --- | --- | --- |
| 1 | 1 | Начало реализации проккта | milestone | 0d | 2021-04-05 09:00 A | 2021-04-05 09:00 A |  | 100% |  | 2021-04-05 09:00 | 2021-04-05 09:00 | 0d |  |  |  |  |  |  |  |  |  |
| 2 | 2 | **Программирование** |  | 41.12d | 2021-04-05 09:00 A | 2021-06-03 10:00 |  | 94% | 2.44d | 2021-04-06 09:00 | 2021-06-03 10:00 | 40.12d | 0d |  |  | Сервер базы данных | 826h | 790h | 356,750 | 361,625 | 345,253.75 |
| 3 | 2.1 | Постановка задачи |  | 5d | 2021-04-05 09:00 A | 2021-04-12 09:00 A | 1FS+1d | 100% |  | 2021-04-06 09:00 | 2021-04-13 09:00 | 5d |  |  |  | Аналитик; Ведущий программист | 65h | 65h | 38,937.5 | 45,500 | 38,937.5 |
| 4 | 2.2 | Разработка интерфейса |  | 8.88d | 2021-04-13 09:00 A | 2021-04-23 18:00 A | 3 | 100% |  | 2021-04-13 09:00 | 2021-04-20 09:00 | 5d |  |  |  | Ведущий программист; Программист 1; Программист 2; Программист 3 | 160h | 160h | 64,000 | 64,000 | 64,000 |
| 5 | 2.3 | Разработка модулей обработки данных |  | 14d | 2021-05-13 13:00 A | 2021-06-03 10:00 | 4 | 77% | 3.25d | 2021-05-13 13:00 | 2021-06-03 10:00 | 14d | 0d |  |  | Программист 2; Программист 3; Программист 1 | 240h | 204h | 82,500 | 81,000 | 71,093.75 |
| 6 | 2.4 | Разработка базы данных |  | 15d | 2021-04-13 09:00 A | 2021-05-12 12:00 A | 3 | 100% |  | 2021-04-13 09:00 | 2021-05-05 12:00 | 15d |  |  |  | Аналитик; Программист 1; Программист 2 | 265h | 265h | 112,812.5 | 112,625 | 112,812.5 |
| 7 | 2.5 | Заполнение базы данных |  | 12d | 2021-05-13 09:00 A | 2021-05-31 14:30 A | 6 | 100% |  | 2021-05-05 13:00 | 2021-05-25 08:30 | 12d |  |  |  | Наборщики данных | 96h | 96h | 22,000 | 22,000 | 22,000 |
| 8 | 3 | Программирование завершено | milestone | 0d | 2021-06-03 10:00 | 2021-06-03 10:00 | 5, 7 |  |  | 2021-06-03 10:00 | 2021-06-03 10:00 | 0d | 0d |  |  |  |  |  |  |  |  |
| 9 | 4 | **Тестирование и отладка** |  | 21.5d | 2021-06-03 10:00 | 2021-07-05 15:00 |  |  |  | 2021-06-03 10:00 | 2021-07-05 15:00 | 21.5d | 15.38d |  |  |  | 320h |  | 125,625 | 125,000 |  |
| 10 | 4.1 | Подготовка тестовых наборов данных |  | 5d | 2021-06-03 10:00 | 2021-06-10 14:00 | 8FS-5d |  |  | 2021-06-03 10:00 | 2021-06-10 14:00 | 5d | 15.38d | 0d |  | Программист 1; Программист 3 | 80h |  | 29,625 | 29,000 |  |
| 11 | 4.2 | Тестирование и исправление ошибок |  | 15d | 2021-06-10 14:00 | 2021-07-05 15:00 | 10 |  |  | 2021-06-10 14:00 | 2021-07-05 15:00 | 15d | 15.38d | 0d |  | Ведущий программист; Программист 2 | 240h |  | 95,000 | 95,000 |  |
| 12 | 5 | Отладка завершена | milestone | 0d | 2021-07-05 15:00 | 2021-07-05 15:00 | 11 |  |  | 2021-07-05 15:00 | 2021-07-05 15:00 | 0d | 15.38d |  |  |  |  |  |  |  |  |
| 13 | 6 | **Разработка документации** |  | 26.88d | 2021-06-18 10:00 | 2021-07-27 09:00 |  |  |  | 2021-06-18 10:00 | 2021-07-27 09:00 | 26.88d | 0d |  |  | Бумага [1 пач]; Картриджи для принтера [2 шт] | 200h |  | 61,700 | 58,200 |  |
| 14 | 6.1 | Составление программной документации |  | 10d | 2021-06-18 10:00 | 2021-07-02 17:00 | 8SS+10d |  |  | 2021-06-18 10:00 | 2021-07-02 17:00 | 10d | 0d |  |  | Технический писатель | 80h |  | 22,900 | 21,500 |  |
| 15 | 6.2 | Составление пользовательской документации |  | 15d | 2021-07-05 08:00 | 2021-07-27 09:00 | 14 |  |  | 2021-07-05 08:00 | 2021-07-27 09:00 | 15d | 0d |  |  | Технический писатель | 120h |  | 33,600 | 31,500 |  |
| 16 | 7 | Конец проекта | milestone | 0d | 2021-07-27 09:00 | 2021-07-27 09:00 | 15 |  |  | 2021-07-27 09:00 | 2021-07-27 09:00 | 0d | 0d |  |  |  |  |  |  |  |  |
| 17 | 8 | **Профилактика оборудования** |  | 47.38d | 2021-04-27 09:00 A | 2021-07-06 12:00 |  | 50% | 23.69d | 2021-04-27 09:00 | 2021-07-06 12:00 | 47.38d | 14.62d |  |  |  | 144h | 72h | 60,187.5 | 60,187.5 | 30,093.75 |
| 18 | 8.1 | Профилактика оборудования 1 |  | 3h | 2021-04-27 09:00 A | 2021-04-27 12:00 A |  | 100% |  | 2021-04-27 09:00 | 2021-04-27 12:00 | 3h |  |  | start no earlier than 2021-04-27 09:00 | Аналитик; Ведущий программист; Наборщики данных [200%]; Программист 1; Программист 2; Программист 3; Специалист для выполнения профилактических работ; Технический писатель | 24h | 24h | 10,031.25 | 10,031.25 | 10,031.25 |
| 19 | 8.2 | Профилактика оборудования 2 |  | 3h | 2021-05-11 09:00 A | 2021-05-11 12:00 A |  | 100% |  | 2021-05-11 09:00 | 2021-05-11 12:00 | 3h |  |  | start no earlier than 2021-05-11 09:00 | Аналитик; Ведущий программист; Наборщики данных [200%]; Программист 1; Программист 2; Программист 3; Специалист для выполнения профилактических работ; Технический писатель | 24h | 24h | 10,031.25 | 10,031.25 | 10,031.25 |
| 20 | 8.3 | Профилактика оборудования 3 |  | 3h | 2021-05-25 09:00 A | 2021-05-25 12:00 A |  | 100% |  | 2021-05-25 09:00 | 2021-05-25 12:00 | 3h |  |  | start no earlier than 2021-05-25 09:00 | Аналитик; Ведущий программист; Наборщики данных [200%]; Программист 1; Программист 2; Программист 3; Специалист для выполнения профилактических работ; Технический писатель | 24h | 24h | 10,031.25 | 10,031.25 | 10,031.25 |
| 21 | 8.4 | Профилактика оборудования 4 |  | 3h | 2021-06-08 09:00 | 2021-06-08 12:00 |  |  |  | 2021-06-08 09:00 | 2021-06-08 12:00 | 3h | 33.62d |  | start no earlier than 2021-06-08 09:00 | Аналитик; Ведущий программист; Наборщики данных [200%]; Программист 1; Программист 2; Программист 3; Специалист для выполнения профилактических работ; Технический писатель | 24h |  | 10,031.25 | 10,031.25 |  |
| 22 | 8.5 | Профилактика оборудования 5 |  | 3h | 2021-06-22 09:00 | 2021-06-22 12:00 |  |  |  | 2021-06-22 09:00 | 2021-06-22 12:00 | 3h | 24.62d |  | start no earlier than 2021-06-22 09:00 | Аналитик; Ведущий программист; Наборщики данных [200%]; Программист 1; Программист 2; Программист 3; Специалист для выполнения профилактических работ; Технический писатель | 24h |  | 10,031.25 | 10,031.25 |  |
| 23 | 8.6 | Профилактика оборудования 6 |  | 3h | 2021-07-06 09:00 | 2021-07-06 12:00 |  |  |  | 2021-07-06 09:00 | 2021-07-06 12:00 | 3h | 14.62d |  | start no earlier than 2021-07-06 09:00 | Аналитик; Ведущий программист; Наборщики данных [200%]; Программист 1; Программист 2; Программист 3; Специалист для выполнения профилактических работ; Технический писатель | 24h |  | 10,031.25 | 10,031.25 |  |
