Schedule from MS Project, 2021-03-01 to 2021-08-20, status date 2021-05-11, costs in р., A marks actual dates.
Команда разработчиков из 16 человек. Проект должен быть завершен в течение 6 месяцев. Бюджет проекта: 50 000 рублей

## Calendars

- Стандартный: Mon-Fri 09:00-13:00, 14:00-18:00; Sat-Sun off. Exceptions (off unless hours are given): 2021-03-08 (Международный женский день), 2021-05-03 (Майские каникулы), 2021-05-09 to 2021-05-10 (День победы), 2021-06-12 to 2021-06-14 (День России).

## Resources

| Resource | Group | Rate | Cost per use |
| --- | --- | --- | --- |
| Ведущий программист | Программирование | 10 | 100 |
| Программист#1 | Программирование | 7 | 50 |
| Программист#2 | Программирование | 7.7 | 55 |
| Программист#3 | Программирование | 7.7 | 55 |
| Программист#4 | Программирование | 7.7 | 55 |
| Системный аналитик | Анализ | 20 | 300 |
| Художник-дизайнер | Дизайн | 8 | 70 |
| Технический писатель | Документация | 5 | 20 |
| Web-дизайнер | Internet | 7 | 50 |
| 3D аниматор | Дизайн | 8 | 70 |
| Мультимедиа-корреспондент | М-медиа | 3.45 | 23 |
| Наборщик данных#1 | Ввод данных | 2 | 10 |
| Наборщик данных#2 | Ввод данных | 2 | 10 |
| Наборщик данных#3 | Ввод данных | 2 | 10 |
| Наборщик данных#4 | Ввод данных | 2 | 10 |
| Наборщик данных#5 | Ввод данных | 2 | 10 |
| Дополнительный сервер | Аренда | 2 |  |
| Server |  |  | 3500 |
| Тестировщик 1 |  | 5.6 | 44 |
| Тестировщик 2 |  | 5.6 | 44 |
| Тестировщик 4 |  | 5.6 | 44 |
| Тестировщик 3 |  | 5.6 | 44 |

## Schedule

| ID | WBS | Task | Type | Duration | Start | Finish | Predecessors | Complete | Remaining | Baseline start | Baseline finish | Baseline duration | Total slack | Free slack | Constraint | Resources | Work | Actual work | Cost | Baseline cost | Actual cost |
| --- | --- | --- | --- | --- | --- | --- | --- | --- | --- | --- | --- | --- | --- | --- | --- | --- | --- | --- | --- | --- | --- |
| 1 | 1 | Начало проекта | milestone | 0w | 2021-03-01 08:00 A | 2021-03-01 08:00 A |  | 100% |  | 2021-03-01 08:00 | 2021-03-01 08:00 | 0w |  |  |  |  |  |  |  |  |  |
| 2 | 2 | **Создание интерфейса** |  | 102.13d | 2021-03-01 09:00 A | 2021-07-27 10:04 | 1 | 74% | 26.08d | 2021-03-01 10:00 | 2021-07-12 15:23 | 91.55d | 0d |  |  |  | 560h | 320h | 5,550 | 5,550 | 3,510 |
| 3 | 2.1 | **Разработка дизайна интерфейса** |  | 29.38d | 2021-03-01 09:00 A | 2021-04-12 12:00 A |  | 100% |  | 2021-03-01 10:00 | 2021-04-06 16:00 | 25.62d |  |  |  |  | 320h | 320h | 2,770 | 2,770 | 2,770 |
| 4 | 2.1.1 | Разработка 2D графических элементов |  | 3w | 2021-03-01 09:00 A | 2021-03-23 12:00 A |  | 100% |  | 2021-03-01 10:00 | 2021-03-23 13:00 | 3w |  |  |  | Художник-дизайнер | 120h | 120h | 1,030 | 1,030 | 1,030 |
| 5 | 2.1.2 | Разработка 3D графичиских элементов |  | 2.75w | 2021-03-01 09:00 A | 2021-03-19 18:00 A | 4SS | 100% |  | 2021-03-01 10:00 | 2021-03-16 12:00 | 2w |  |  | finish no earlier than 2021-03-20 18:00 | 3D аниматор | 80h | 80h | 710 | 710 | 710 |
| 6 | 2.1.3 | Создание заставки |  | 3w | 2021-03-22 09:00 A | 2021-04-12 12:00 A | 5 | 100% |  | 2021-03-16 12:00 | 2021-04-06 16:00 | 3w |  |  |  | 3D аниматор | 120h | 120h | 1,030 | 1,030 | 1,030 |
| 7 | 2.2 | Программирование интерфейса |  | 3w | 2021-07-06 10:04 | 2021-07-27 10:04 | 3, 12 |  |  | 2021-06-21 15:23 | 2021-07-12 15:23 | 3w | 0d |  |  | Программист#3; Программист#4 | 240h |  | 1,780 | 1,780 |  |
| 8 | 3 | **Построение базы объектов** |  | 89.79d | 2021-03-24 11:12 A | 2021-08-02 09:29 |  | 33% | 60.34d | 2021-03-23 14:00 | 2021-07-23 16:00 | 85.25d | 14.31d |  |  | Дополнительный сервер; Server | 5848.28h | 494.8h | 13,467.6 | 15,390 | 4,497.6 |
| 9 | 3.1 | Анализ и построение структуры базы объектов |  | 2.86w | 2021-03-24 11:12 A | 2021-04-14 09:29 A |  | 100% |  | 2021-03-23 14:00 | 2021-04-06 16:00 | 2w |  |  |  | Системный аналитик [70%] | 80h | 80h | 1,810 | 1,900 | 1,810 |
| 10 | 3.2 | Программирование средств обработки базы объектов |  | 3w | 2021-04-14 09:29 A | 2021-05-06 09:29 A | 9 | 100% |  | 2021-04-06 16:00 | 2021-04-27 16:00 | 3w |  |  |  | Программист#3; Программист#4 | 240h | 240h | 1,958 | 1,780 | 1,958 |
| 11 | 3.3 | Наполнение базы объектов |  | 12w | 2021-05-06 09:29 A | 2021-08-02 09:29 | 10 |  | 12w | 2021-04-27 16:00 | 2021-07-23 16:00 | 12w | 14.31d |  |  | Наборщик данных#1; Наборщик данных#2; Наборщик данных#3; Наборщик данных#4; Наборщик данных#5 | 2400h |  | 4,850 | 4,850 | 50 |
| 12 | 4 | **Создание ядра GIS** |  | 87.13d | 2021-03-01 09:00 A | 2021-07-06 10:04 |  | 54% | 40.28d | 2021-03-01 10:00 | 2021-06-21 15:23 | 76.55d | 0d |  |  |  | 1880h | 680h | 18,675.56 | 18,292.16 | 8,585 |
| 13 | 4.1 | Анализ и проектирование ядра |  | 3.18w | 2021-03-01 09:00 A | 2021-03-24 11:12 A |  | 100% |  | 2021-03-01 10:00 | 2021-03-23 13:00 | 3w |  |  |  | Ведущий программист; Системный аналитик | 240h | 240h | 4,000 | 4,000 | 4,000 |
| 14 | 4.2 | Создание модели ядра |  | 5.1w | 2021-03-24 11:12 A | 2021-04-28 16:12 A | 13 | 100% |  | 2021-03-23 14:00 | 2021-04-28 10:00 | 5.12w |  |  |  | Ведущий программист; Программист#1 | 400h | 400h | 3,550 | 3,550 | 3,550 |
| 15 | 4.3 | Тестирование модели ядра |  | 1w | 2021-04-28 16:12 A | 2021-05-06 16:12 A | 14 | 100% |  | 2021-04-28 10:00 | 2021-05-06 10:00 | 1w |  |  |  | Программист#1 | 40h | 40h | 330 | 330 | 330 |
| 16 | 4.4 | Создание рабочей версии ядра |  | 7.98w | 2021-05-11 18:00 A | 2021-07-06 10:04 | 15 |  | 7.98w | 2021-05-06 10:00 | 2021-06-21 15:23 | 6.11w | 0d |  | start no earlier than 2021-05-11 18:00 | Ведущий программист; Программист#2; Программист#3; Программист#4 | 1200h |  | 9,795.56 | 9,412.16 | 165 |
| 17 | 5 | Создание мультимедиа - наполнения |  | 6w | 2021-04-12 12:00 A | 2021-05-27 11:00 | 3 | 50% | 3w | 2021-04-06 16:00 | 2021-05-21 13:00 | 6w | 60.12d | 57.87d |  | Мультимедиа-корреспондент | 240h | 120h | 851 | 740 | 437 |
| 18 | 6 | Создание справочной системы |  | 2w | 2021-08-05 14:04 | 2021-08-19 15:04 | 7 |  |  | 2021-07-26 10:00 | 2021-08-09 12:00 | 2w | 0.74d | 5.61d | start no earlier than 2021-07-26 10:00 | Технический писатель | 80h |  | 420 | 420 |  |
| 19 | 7 | **Создание руководства пользователя** |  | 17.38d | 2021-07-13 10:04 | 2021-08-05 14:04 | 7FS-10d |  |  | 2021-06-28 15:23 | 2021-07-22 16:23 | 18.12d | 0d |  |  |  | 160h |  | 1,010 | 1,010 |  |
| 20 | 7.1 | Разработка дизайна руководства |  | 1w | 2021-07-13 10:04 | 2021-07-20 11:04 |  |  |  | 2021-06-28 15:23 | 2021-07-06 09:23 | 1w | 0d |  |  | Художник-дизайнер | 40h |  | 390 | 390 |  |
| 21 | 7.2 | Написание руководства пользователя |  | 3w | 2021-07-15 10:04 | 2021-08-05 14:04 | 20SS+2d |  |  | 2021-06-30 15:23 | 2021-07-22 16:23 | 3w | 0d |  |  | Технический писатель | 120h |  | 620 | 620 |  |
| 22 | 8 | **Создание web - сайта и поддержка** |  | 23.62d | 2021-07-15 10:04 | 2021-08-17 16:04 |  |  |  | 2021-06-30 15:23 | 2021-08-04 14:23 | 24.88d | 0d |  |  |  | 248h |  | 2,106 | 2,106 |  |
| 23 | 8.1 | Разработка структуры сайта |  | 1d | 2021-07-15 10:04 | 2021-07-16 10:04 | 21SS |  |  | 2021-06-30 15:23 | 2021-07-01 15:23 | 1d | 0d |  |  | Web-дизайнер | 8h |  | 106 | 106 |  |
| 24 | 8.2 | Разработка дизайна сайта |  | 1.43w | 2021-07-16 10:04 | 2021-07-27 12:04 | 23 |  |  | 2021-07-01 15:23 | 2021-07-13 12:23 | 1.4w | 0d |  |  | 3D аниматор; Web-дизайнер; Художник-дизайнер | 120h |  | 1,110 | 1,110 |  |
| 25 | 8.3 | Наполнение сайта |  | 3w | 2021-07-27 12:04 | 2021-08-17 16:04 | 24 |  |  | 2021-07-13 12:23 | 2021-08-04 14:23 | 3w | 0d |  |  | Web-дизайнер | 120h |  | 890 | 890 |  |
| 26 | 9 | Тестирование сайта |  | 1.52w | 2021-08-10 16:04 | 2021-08-20 11:57 | 22FS-1w |  |  | 2021-07-28 14:23 | 2021-08-16 12:39 | 2.56w | 0d |  |  | Ведущий программист; Программист#2; Программист#3; Программист#4; Тестировщик 1; Тестировщик 2; Тестировщик 3; Тестировщик 4 | 480h |  | 3,616.67 | 3,940.97 |  |
| 27 | 10 | Сдача сайта в эксплуатацию | milestone | 0w | 2021-08-20 11:57 | 2021-08-20 11:57 | 26 |  |  | 2021-08-16 12:39 | 2021-08-16 12:39 | 0w | 0d |  |  |  |  |  |  |  |  |

| ID | WBS | Task | Duration | Start | Finish | Complete | Remaining | Baseline start | Baseline finish | Baseline duration | Total slack | Free slack | Constraint | Resources | Work | Actual work | Cost | Baseline cost | Actual cost |
| --- | --- | --- | --- | --- | --- | --- | --- | --- | --- | --- | --- | --- | --- | --- | --- | --- | --- | --- | --- |
| 28 | 11 | **Совещание** | 111.12d | 2021-03-03 09:00 A | 2021-08-11 10:00 | 42% | 64.82d | 2021-03-01 09:00 | 2021-08-16 09:00 | 116d | 7.25d | 4.5d |  |  | 168h | 70h | 1,464 | 1,464 | 610 |
| 29 | 11.1 | Совещание 1 | 1h | 2021-03-03 09:00 A | 2021-03-03 10:00 A | 100% |  | 2021-03-01 09:00 | 2021-03-01 10:00 | 1h |  |  | start no earlier than 2021-03-03 08:00 | 3D аниматор; Web-дизайнер; Ведущий программист; Мультимедиа-корреспондент; Системный аналитик; Технический писатель; Художник-дизайнер | 7h | 7h | 61 | 61 | 61 |
| 30 | 11.2 | Совещание 2 | 1h | 2021-03-10 09:00 A | 2021-03-10 10:00 A | 100% |  | 2021-03-09 09:00 | 2021-03-09 10:00 | 1h |  |  | start no earlier than 2021-03-10 08:00 | 3D аниматор; Web-дизайнер; Ведущий программист; Мультимедиа-корреспондент; Системный аналитик; Технический писатель; Художник-дизайнер | 7h | 7h | 61 | 61 | 61 |
| 31 | 11.3 | Совещание 3 | 1h | 2021-03-17 09:00 A | 2021-03-17 10:00 A | 100% |  | 2021-03-15 09:00 | 2021-03-15 10:00 | 1h |  |  | start no earlier than 2021-03-17 08:00 | 3D аниматор; Web-дизайнер; Ведущий программист; Мультимедиа-корреспондент; Системный аналитик; Технический писатель; Художник-дизайнер | 7h | 7h | 61 | 61 | 61 |
| 32 | 11.4 | Совещание 4 | 1h | 2021-03-24 09:00 A | 2021-03-24 10:00 A | 100% |  | 2021-03-22 09:00 | 2021-03-22 10:00 | 1h |  |  | start no earlier than 2021-03-24 08:00 | 3D аниматор; Web-дизайнер; Ведущий программист; Мультимедиа-корреспондент; Системный аналитик; Технический писатель; Художник-дизайнер | 7h | 7h | 61 | 61 | 61 |
| 33 | 11.5 | Совещание 5 | 1h | 2021-03-31 09:00 A | 2021-03-31 10:00 A | 100% |  | 2021-03-29 09:00 | 2021-03-29 10:00 | 1h |  |  | start no earlier than 2021-03-31 08:00 | 3D аниматор; Web-дизайнер; Ведущий программист; Мультимедиа-корреспондент; Системный аналитик; Технический писатель; Художник-дизайнер | 7h | 7h | 61 | 61 | 61 |
| 34 | 11.6 | Совещание 6 | 1h | 2021-04-07 09:00 A | 2021-04-07 10:00 A | 100% |  | 2021-04-05 09:00 | 2021-04-05 10:00 | 1h |  |  | start no earlier than 2021-04-07 08:00 | 3D аниматор; Web-дизайнер; Ведущий программист; Мультимедиа-корреспондент; Системный аналитик; Технический писатель; Художник-дизайнер | 7h | 7h | 61 | 61 | 61 |
| 35 | 11.7 | Совещание 7 | 1h | 2021-04-14 09:00 A | 2021-04-14 10:00 A | 100% |  | 2021-04-12 09:00 | 2021-04-12 10:00 | 1h |  |  | start no earlier than 2021-04-14 08:00 | 3D аниматор; Web-дизайнер; Ведущий программист; Мультимедиа-корреспондент; Системный аналитик; Технический писатель; Художник-дизайнер | 7h | 7h | 61 | 61 | 61 |
| 36 | 11.8 | Совещание 8 | 1h | 2021-04-21 09:00 A | 2021-04-21 10:00 A | 100% |  | 2021-04-19 09:00 | 2021-04-19 10:00 | 1h |  |  | start no earlier than 2021-04-21 08:00 | 3D аниматор; Web-дизайнер; Ведущий программист; Мультимедиа-корреспондент; Системный аналитик; Технический писатель; Художник-дизайнер | 7h | 7h | 61 | 61 | 61 |
| 37 | 11.9 | Совещание 9 | 1h | 2021-04-28 09:00 A | 2021-04-28 10:00 A | 100% |  | 2021-04-26 09:00 | 2021-04-26 10:00 | 1h |  |  | start no earlier than 2021-04-28 08:00 | 3D аниматор; Web-дизайнер; Ведущий программист; Мультимедиа-корреспондент; Системный аналитик; Технический писатель; Художник-дизайнер | 7h | 7h | 61 | 61 | 61 |
| 38 | 11.10 | Совещание 10 | 1h | 2021-05-05 09:00 A | 2021-05-05 10:00 A | 100% |  | 2021-05-04 09:00 | 2021-05-04 10:00 | 1h |  |  | start no earlier than 2021-05-05 08:00 | 3D аниматор; Web-дизайнер; Ведущий программист; Мультимедиа-корреспондент; Системный аналитик; Технический писатель; Художник-дизайнер | 7h | 7h | 61 | 61 | 61 |
| 39 | 11.11 | Совещание 11 | 1h | 2021-05-12 09:00 | 2021-05-12 10:00 |  |  | 2021-05-11 09:00 | 2021-05-11 10:00 | 1h | 71.25d | 68.5d | start no earlier than 2021-05-12 08:00 | 3D аниматор; Web-дизайнер; Ведущий программист; Мультимедиа-корреспондент; Системный аналитик; Технический писатель; Художник-дизайнер | 7h |  | 61 | 61 |  |
| 40 | 11.12 | Совещание 12 | 1h | 2021-05-19 09:00 | 2021-05-19 10:00 |  |  | 2021-05-17 09:00 | 2021-05-17 10:00 | 1h | 66.25d | 63.5d | start no earlier than 2021-05-19 08:00 | 3D аниматор; Web-дизайнер; Ведущий программист; Мультимедиа-корреспондент; Системный аналитик; Технический писатель; Художник-дизайнер | 7h |  | 61 | 61 |  |
| 41 | 11.13 | Совещание 13 | 1h | 2021-05-26 09:00 | 2021-05-26 10:00 |  |  | 2021-05-24 09:00 | 2021-05-24 10:00 | 1h | 61.25d | 58.5d | start no earlier than 2021-05-26 08:00 | 3D аниматор; Web-дизайнер; Ведущий программист; Мультимедиа-корреспондент; Системный аналитик; Технический писатель; Художник-дизайнер | 7h |  | 61 | 61 |  |
| 42 | 11.14 | Совещание 14 | 1h | 2021-06-02 09:00 | 2021-06-02 10:00 |  |  | 2021-05-31 09:00 | 2021-05-31 10:00 | 1h | 56.25d | 53.5d | start no earlier than 2021-06-02 08:00 | 3D аниматор; Web-дизайнер; Ведущий программист; Мультимедиа-корреспондент; Системный аналитик; Технический писатель; Художник-дизайнер | 7h |  | 61 | 61 |  |
| 43 | 11.15 | Совещание 15 | 1h | 2021-06-09 09:00 | 2021-06-09 10:00 |  |  | 2021-06-07 09:00 | 2021-06-07 10:00 | 1h | 51.25d | 48.5d | start no earlier than 2021-06-09 08:00 | 3D аниматор; Web-дизайнер; Ведущий программист; Мультимедиа-корреспондент; Системный аналитик; Технический писатель; Художник-дизайнер | 7h |  | 61 | 61 |  |
| 44 | 11.16 | Совещание 16 | 1h | 2021-06-16 09:00 | 2021-06-16 10:00 |  |  | 2021-06-15 09:00 | 2021-06-15 10:00 | 1h | 47.25d | 44.5d | start no earlier than 2021-06-16 08:00 | 3D аниматор; Web-дизайнер; Ведущий программист; Мультимедиа-корреспондент; Системный аналитик; Технический писатель; Художник-дизайнер | 7h |  | 61 | 61 |  |
| 45 | 11.17 | Совещание 17 | 1h | 2021-06-23 09:00 | 2021-06-23 10:00 |  |  | 2021-06-21 09:00 | 2021-06-21 10:00 | 1h | 42.25d | 39.5d | start no earlier than 2021-06-23 08:00 | 3D аниматор; Web-дизайнер; Ведущий программист; Мультимедиа-корреспондент; Системный аналитик; Технический писатель; Художник-дизайнер | 7h |  | 61 | 61 |  |
| 46 | 11.18 | Совещание 18 | 1h | 2021-06-30 09:00 | 2021-06-30 10:00 |  |  | 2021-06-28 09:00 | 2021-06-28 10:00 | 1h | 37.25d | 34.5d | start no earlier than 2021-06-30 08:00 | 3D аниматор; Web-дизайнер; Ведущий программист; Мультимедиа-корреспондент; Системный аналитик; Технический писатель; Художник-дизайнер | 7h |  | 61 | 61 |  |
| 47 | 11.19 | Совещание 19 | 1h | 2021-07-07 09:00 | 2021-07-07 10:00 |  |  | 2021-07-05 09:00 | 2021-07-05 10:00 | 1h | 32.25d | 29.5d | start no earlier than 2021-07-07 08:00 | 3D аниматор; Web-дизайнер; Ведущий программист; Мультимедиа-корреспондент; Системный аналитик; Технический писатель; Художник-дизайнер | 7h |  | 61 | 61 |  |
| 48 | 11.20 | Совещание 20 | 1h | 2021-07-14 09:00 | 2021-07-14 10:00 |  |  | 2021-07-12 09:00 | 2021-07-12 10:00 | 1h | 27.25d | 24.5d | start no earlier than 2021-07-14 08:00 | 3D аниматор; Web-дизайнер; Ведущий программист; Мультимедиа-корреспондент; Системный аналитик; Технический писатель; Художник-дизайнер | 7h |  | 61 | 61 |  |
| 49 | 11.21 | Совещание 21 | 1h | 2021-07-21 09:00 | 2021-07-21 10:00 |  |  | 2021-07-19 09:00 | 2021-07-19 10:00 | 1h | 22.25d | 19.5d | start no earlier than 2021-07-21 08:00 | 3D аниматор; Web-дизайнер; Ведущий программист; Мультимедиа-корреспондент; Системный аналитик; Технический писатель; Художник-дизайнер | 7h |  | 61 | 61 |  |
| 50 | 11.22 | Совещание 22 | 1h | 2021-07-28 09:00 | 2021-07-28 10:00 |  |  | 2021-07-26 09:00 | 2021-07-26 10:00 | 1h | 17.25d | 14.5d | start no earlier than 2021-07-28 08:00 | 3D аниматор; Web-дизайнер; Ведущий программист; Мультимедиа-корреспондент; Системный аналитик; Технический писатель; Художник-дизайнер | 7h |  | 61 | 61 |  |
| 51 | 11.23 | Совещание 23 | 1h | 2021-08-04 09:00 | 2021-08-04 10:00 |  |  | 2021-08-02 09:00 | 2021-08-02 10:00 | 1h | 12.25d | 9.5d | start no earlier than 2021-08-04 08:00 | 3D аниматор; Web-дизайнер; Ведущий программист; Мультимедиа-корреспондент; Системный аналитик; Технический писатель; Художник-дизайнер | 7h |  | 61 | 61 |  |
| 52 | 11.24 | Совещание 24 | 1h | 2021-08-11 09:00 | 2021-08-11 10:00 |  |  | 2021-08-09 09:00 | 2021-08-09 10:00 | 1h | 7.25d | 4.5d | start no earlier than 2021-08-11 08:00 | 3D аниматор; Web-дизайнер; Ведущий программист; Мультимедиа-корреспондент; Системный аналитик; Технический писатель; Художник-дизайнер | 7h |  | 61 | 61 |  |
