Schedule from MS Project, 2021-03-01 to 2021-08-12, status date 2021-05-11, costs in р., A marks actual dates.
Команда разработчиков из 16 человек. Проект должен быть завершен в течение 6 месяцев. Бюджет проекта: 50 000 рублей

## Calendars

- Стандартный: Mon-Fri 09:00-13:00, 14:00-18:00; Sat-Sun off. Exceptions (off unless hours are given): 2021-03-08 (Международный женский день), 2021-05-03 (Майские каникулы), 2021-05-09 to 2021-05-10 (День победы), 2021-06-12 to 2021-06-14 (День России).

## Resources

| Resource | Group | Rate | Cost per use |
| --- | --- | --- | --- |
| Ведущий программист | Программирование | 10 | 100 |
| Программист#1 | Программирование | 7 | 50 |
| Программист#2 | Программирование | 7.7 | 55 |
| Программист#3 | Программирование | 7.7 | 55 |
| Программист#4 | Программирование | 7.7 | 55 |
| Системный аналитик | Анализ | 20 | 300 |
| Художник-дизайнер | Дизайн | 8 | 70 |
| Технический писатель | Документация | 5 | 20 |
| Web-дизайнер | Internet | 7 | 50 |
| 3D аниматор | Дизайн | 8 | 70 |
| Мультимедиа-корреспондент | М-медиа | 3.45 | 23 |
| Наборщик данных#1 | Ввод данных | 2 | 10 |
| Наборщик данных#2 | Ввод данных | 2 | 10 |
| Наборщик данных#3 | Ввод данных | 2 | 10 |
| Наборщик данных#4 | Ввод данных | 2 | 10 |
| Наборщик данных#5 | Ввод данных | 2 | 10 |
| Дополнительный сервер | Аренда | 2 |  |
| Server |  |  | 3500 |

## Schedule

| ID | WBS | Task | Type | Duration | Start | Finish | Predecessors | Complete | Remaining | Baseline start | Baseline finish | Baseline duration | Total slack | Free slack | Constraint | Resources | Work | Actual work | Cost | Baseline cost | Actual cost |
| --- | --- | --- | --- | --- | --- | --- | --- | --- | --- | --- | --- | --- | --- | --- | --- | --- | --- | --- | --- | --- | --- |
| 1 | 1 | Начало проекта | milestone | 0w | 2021-03-01 08:00 | 2021-03-01 08:00 |  |  |  | 2021-03-01 08:00 | 2021-03-01 08:00 | 0w | 0d |  |  |  |  |  |  |  |  |
| 2 | 2 | **Разработка** |  | 106.06d | 2021-03-01 09:00 A | 2021-08-02 09:29 |  | 37% | 66.64d |  |  |  | 7.95d |  |  |  | 7586h | 1174.8h | 32,773.28 |  | 10,442.6 |
| 3 | 2.1 | **Построение базы объектов** |  | 75d | 2021-04-14 09:29 A | 2021-08-02 09:29 |  | 20% | 60d | 2021-03-23 14:00 | 2021-07-23 16:00 | 85.25d | 7.95d |  |  | Дополнительный сервер; Server | 5266h | 414.8h | 11,657.6 | 15,390 | 2,557.6 |
| 4 | 2.1.1 | Программирование средств обработки базы объектов |  | 3w | 2021-04-14 09:29 A | 2021-05-06 09:29 A | 27 | 100% |  | 2021-04-06 16:00 | 2021-04-27 16:00 | 3w |  |  |  | Программист#3; Программист#4 | 240h | 240h | 1,958 | 1,780 | 1,958 |
| 5 | 2.1.2 | Наполнение базы объектов |  | 12w | 2021-05-06 09:29 A | 2021-08-02 09:29 | 4 |  | 12w | 2021-04-27 16:00 | 2021-07-23 16:00 | 12w | 7.95d |  |  | Наборщик данных#1; Наборщик данных#2; Наборщик данных#3; Наборщик данных#4; Наборщик данных#5 | 2400h |  | 4,850 | 4,850 | 50 |
| 6 | 2.2 | Сдача сайта в эксплуатацию | milestone | 0w | 2021-07-15 15:17 | 2021-07-15 15:17 | 33 |  |  | 2021-08-16 12:39 | 2021-08-16 12:39 | 0w | 19.35d |  |  |  |  |  |  |  |  |
| 7 | 2.3 | **Создание интерфейса** |  | 102.13d | 2021-03-01 09:00 A | 2021-07-27 10:04 | 1 | 74% | 26.08d | 2021-03-01 10:00 | 2021-07-12 15:23 | 91.55d | 0d |  |  |  | 560h | 320h | 5,550 | 5,550 | 3,510 |
| 8 | 2.3.1 | **Разработка дизайна интерфейса** |  | 29.38d | 2021-03-01 09:00 A | 2021-04-12 12:00 A |  | 100% |  | 2021-03-01 10:00 | 2021-04-06 16:00 | 25.62d |  |  |  |  | 320h | 320h | 2,770 | 2,770 | 2,770 |
| 9 | 2.3.1.1 | Разработка 2D графических элементов |  | 3w | 2021-03-01 09:00 A | 2021-03-23 12:00 A |  | 100% |  | 2021-03-01 10:00 | 2021-03-23 13:00 | 3w |  |  |  | Художник-дизайнер | 120h | 120h | 1,030 | 1,030 | 1,030 |
| 10 | 2.3.1.2 | Разработка 3D графичиских элементов |  | 2.75w | 2021-03-01 09:00 A | 2021-03-19 18:00 A | 9SS | 100% |  | 2021-03-01 10:00 | 2021-03-16 12:00 | 2w |  |  | finish no earlier than 2021-03-20 18:00 | 3D аниматор | 80h | 80h | 710 | 710 | 710 |
| 11 | 2.3.1.3 | Создание заставки |  | 3w | 2021-03-22 09:00 A | 2021-04-12 12:00 A | 10 | 100% |  | 2021-03-16 12:00 | 2021-04-06 16:00 | 3w |  |  |  | 3D аниматор | 120h | 120h | 1,030 | 1,030 | 1,030 |
| 12 | 2.3.2 | Программирование интерфейса |  | 3w | 2021-07-06 10:04 | 2021-07-27 10:04 | 8, 15 |  |  | 2021-06-21 15:23 | 2021-07-12 15:23 | 3w | 0d |  |  | Программист#3; Программист#4 | 240h |  | 1,780 | 1,780 |  |
| 13 | 2.4 | **Создание web - сайта и поддержка** |  | 15.38d | 2021-03-01 09:00 | 2021-03-23 12:00 |  |  |  | 2021-06-30 15:23 | 2021-08-04 14:23 | 24.88d | 24.97d | 5.62d |  |  | 120h |  | 890 | 2,106 |  |
| 14 | 2.4.1 | Наполнение сайта |  | 3w | 2021-03-01 09:00 | 2021-03-23 12:00 |  |  |  | 2021-07-13 12:23 | 2021-08-04 14:23 | 3w | 24.97d |  |  | Web-дизайнер | 120h |  | 890 | 890 |  |
| 15 | 2.5 | **Создание ядра GIS** |  | 87.13d | 2021-03-01 09:00 A | 2021-07-06 10:04 |  | 33% | 58.05d | 2021-03-01 10:00 | 2021-06-21 15:23 | 76.55d | 0d |  |  |  | 1640h | 440h | 14,675.68 | 18,292.16 | 4,375 |
| 16 | 2.5.1 | Создание модели ядра |  | 5.1w | 2021-03-24 11:12 A | 2021-04-28 16:12 A | 26 | 100% |  | 2021-03-23 14:00 | 2021-04-28 10:00 | 5.12w |  |  |  | Ведущий программист; Программист#1 | 400h | 400h | 3,550 | 3,550 | 3,550 |
| 17 | 2.5.2 | Создание web - сайта и поддержка |  | 21d | 2021-03-01 09:00 | 2021-03-30 18:00 |  |  |  | 2021-06-30 15:23 | 2021-08-04 14:23 | 24.88d | 19.35d | 0d |  |  |  |  |  | 2,106 |  |
| 18 | 2.5.3 | Тестирование модели ядра |  | 1w | 2021-04-28 16:12 A | 2021-05-06 16:12 A | 16 | 100% |  | 2021-04-28 10:00 | 2021-05-06 10:00 | 1w |  |  |  | Программист#1 | 40h | 40h | 330 | 330 | 330 |
| 19 | 2.5.4 | Создание рабочей версии ядра |  | 7.98w | 2021-05-11 18:00 A | 2021-07-06 10:04 | 18 |  | 7.98w | 2021-05-06 10:00 | 2021-06-21 15:23 | 6.11w | 0d |  | start no earlier than 2021-05-11 18:00 | Ведущий программист; Программист#2; Программист#3; Программист#4 | 1200h |  | 9,795.68 | 9,412.16 | 165 |
| 20 | 3 | **Дизайн** |  | 44.88d | 2021-03-23 12:00 A | 2021-05-27 11:00 |  | 31% | 30.89d |  |  |  | 53.76d |  |  |  | 408h | 120h | 2,457 |  | 437 |
| 21 | 3.1 | Создание мультимедиа - наполнения |  | 6w | 2021-04-12 12:00 A | 2021-05-27 11:00 | 8 | 50% | 3w | 2021-04-06 16:00 | 2021-05-21 13:00 | 6w | 53.76d |  |  | Мультимедиа-корреспондент | 240h | 120h | 851 | 740 | 437 |
| 22 | 3.2 | Разработка дизайна руководства |  | 1w | 2021-03-23 12:00 | 2021-03-30 13:00 |  |  |  | 2021-06-28 15:23 | 2021-07-06 09:23 | 1w | 79.51d | 0d |  | Художник-дизайнер | 40h |  | 390 | 390 |  |
| 23 | 3.3 | Разработка структуры сайта |  | 1d | 2021-03-25 12:00 | 2021-03-26 12:00 | 29SS |  |  | 2021-06-30 15:23 | 2021-07-01 15:23 | 1d | 79.51d | 0d |  | Web-дизайнер | 8h |  | 106 | 106 |  |
| 24 | 3.4 | Разработка дизайна сайта |  | 2.42w | 2021-03-26 12:00 | 2021-04-19 13:00 | 23 |  |  | 2021-07-01 15:23 | 2021-07-13 12:23 | 1.4w | 79.51d |  |  | 3D аниматор; Web-дизайнер; Художник-дизайнер | 120h |  | 1,110 | 1,110 |  |

| ID | WBS | Task | Duration | Start | Finish | Predecessors | Complete | Remaining | Baseline start | Baseline finish | Baseline duration | Total slack | Free slack | Constraint | Resources | Work | Actual work | Cost | Baseline cost | Actual cost |
| --- | --- | --- | --- | --- | --- | --- | --- | --- | --- | --- | --- | --- | --- | --- | --- | --- | --- | --- | --- | --- |
| 25 | 4 | **Анализ** | 31.06d | 2021-03-01 09:00 A | 2021-04-14 09:29 A |  | 100% |  |  |  |  |  |  |  |  | 320h | 320h | 5,810 |  | 5,810 |
| 26 | 4.1 | Анализ и проектирование ядра | 3.18w | 2021-03-01 09:00 A | 2021-03-24 11:12 A |  | 100% |  | 2021-03-01 10:00 | 2021-03-23 13:00 | 3w |  |  |  | Ведущий программист; Системный аналитик | 240h | 240h | 4,000 | 4,000 | 4,000 |
| 27 | 4.2 | Анализ и построение структуры базы объектов | 2.86w | 2021-03-24 11:12 A | 2021-04-14 09:29 A |  | 100% |  | 2021-03-23 14:00 | 2021-04-06 16:00 | 2w |  |  |  | Системный аналитик [70%] | 80h | 80h | 1,810 | 1,900 | 1,810 |
| 28 | 5 | **Документация** | 96.63d | 2021-03-25 12:00 | 2021-08-12 09:04 |  |  |  |  |  |  | 0d |  |  |  | 200h |  | 1,040 |  |  |
| 29 | 5.1 | Написание руководства пользователя | 3w | 2021-03-25 12:00 | 2021-04-15 16:00 | 22SS+2d |  |  | 2021-06-30 15:23 | 2021-07-22 16:23 | 3w | 79.51d | 0d |  | Технический писатель | 120h |  | 620 | 620 |  |
| 30 | 5.2 | Создание справочной системы | 2w | 2021-07-27 10:04 | 2021-08-10 12:04 | 12 |  |  | 2021-07-26 10:00 | 2021-08-09 12:00 | 2w | 1.62d |  | start no earlier than 2021-07-26 10:00 | Технический писатель | 80h |  | 420 | 420 |  |
| 31 | 5.3 | Создание руководства пользователя | 21.88d | 2021-07-13 10:04 | 2021-08-12 09:04 | 12FS-10d |  |  | 2021-06-28 15:23 | 2021-07-22 16:23 | 18.12d | 0d |  |  |  |  |  |  | 1,010 |  |
| 32 | 6 | **Тестирование** | 78.66d | 2021-03-24 09:00 | 2021-07-15 15:17 |  |  |  |  |  |  | 19.35d |  |  |  | 480h |  | 4,112.73 |  |  |
| 33 | 6.1 | Тестирование сайта | 6.07w | 2021-03-24 09:00 | 2021-07-15 15:17 | 13FS-1w, 17FS-1w |  |  | 2021-07-28 14:23 | 2021-08-16 12:39 | 2.56w | 19.35d | 0d |  | Ведущий программист; Программист#2; Программист#3; Программист#4 | 480h |  | 4,112.73 | 3,940.97 |  |
| 34 | 7 | **Совещание** | 111.12d | 2021-03-03 09:00 A | 2021-08-11 10:00 |  | 42% | 64.82d | 2021-03-01 09:00 | 2021-08-16 09:00 | 116d | 0.88d |  |  |  | 168h | 70h | 1,464 | 1,464 | 610 |
| 35 | 7.1 | Совещание 1 | 1h | 2021-03-03 09:00 A | 2021-03-03 10:00 A |  | 100% |  | 2021-03-01 09:00 | 2021-03-01 10:00 | 1h |  |  | start no earlier than 2021-03-03 08:00 | 3D аниматор; Web-дизайнер; Ведущий программист; Мультимедиа-корреспондент; Системный аналитик; Технический писатель; Художник-дизайнер | 7h | 7h | 61 | 61 | 61 |
| 36 | 7.2 | Совещание 2 | 1h | 2021-03-10 09:00 A | 2021-03-10 10:00 A |  | 100% |  | 2021-03-09 09:00 | 2021-03-09 10:00 | 1h |  |  | start no earlier than 2021-03-10 08:00 | 3D аниматор; Web-дизайнер; Ведущий программист; Мультимедиа-корреспондент; Системный аналитик; Технический писатель; Художник-дизайнер | 7h | 7h | 61 | 61 | 61 |
| 37 | 7.3 | Совещание 3 | 1h | 2021-03-17 09:00 A | 2021-03-17 10:00 A |  | 100% |  | 2021-03-15 09:00 | 2021-03-15 10:00 | 1h |  |  | start no earlier than 2021-03-17 08:00 | 3D аниматор; Web-дизайнер; Ведущий программист; Мультимедиа-корреспондент; Системный аналитик; Технический писатель; Художник-дизайнер | 7h | 7h | 61 | 61 | 61 |
| 38 | 7.4 | Совещание 4 | 1h | 2021-03-24 09:00 A | 2021-03-24 10:00 A |  | 100% |  | 2021-03-22 09:00 | 2021-03-22 10:00 | 1h |  |  | start no earlier than 2021-03-24 08:00 | 3D аниматор; Web-дизайнер; Ведущий программист; Мультимедиа-корреспондент; Системный аналитик; Технический писатель; Художник-дизайнер | 7h | 7h | 61 | 61 | 61 |
| 39 | 7.5 | Совещание 5 | 1h | 2021-03-31 09:00 A | 2021-03-31 10:00 A |  | 100% |  | 2021-03-29 09:00 | 2021-03-29 10:00 | 1h |  |  | start no earlier than 2021-03-31 08:00 | 3D аниматор; Web-дизайнер; Ведущий программист; Мультимедиа-корреспондент; Системный аналитик; Технический писатель; Художник-дизайнер | 7h | 7h | 61 | 61 | 61 |
| 40 | 7.6 | Совещание 6 | 1h | 2021-04-07 09:00 A | 2021-04-07 10:00 A |  | 100% |  | 2021-04-05 09:00 | 2021-04-05 10:00 | 1h |  |  | start no earlier than 2021-04-07 08:00 | 3D аниматор; Web-дизайнер; Ведущий программист; Мультимедиа-корреспондент; Системный аналитик; Технический писатель; Художник-дизайнер | 7h | 7h | 61 | 61 | 61 |
| 41 | 7.7 | Совещание 7 | 1h | 2021-04-14 09:00 A | 2021-04-14 10:00 A |  | 100% |  | 2021-04-12 09:00 | 2021-04-12 10:00 | 1h |  |  | start no earlier than 2021-04-14 08:00 | 3D аниматор; Web-дизайнер; Ведущий программист; Мультимедиа-корреспондент; Системный аналитик; Технический писатель; Художник-дизайнер | 7h | 7h | 61 | 61 | 61 |
| 42 | 7.8 | Совещание 8 | 1h | 2021-04-21 09:00 A | 2021-04-21 10:00 A |  | 100% |  | 2021-04-19 09:00 | 2021-04-19 10:00 | 1h |  |  | start no earlier than 2021-04-21 08:00 | 3D аниматор; Web-дизайнер; Ведущий программист; Мультимедиа-корреспондент; Системный аналитик; Технический писатель; Художник-дизайнер | 7h | 7h | 61 | 61 | 61 |
| 43 | 7.9 | Совещание 9 | 1h | 2021-04-28 09:00 A | 2021-04-28 10:00 A |  | 100% |  | 2021-04-26 09:00 | 2021-04-26 10:00 | 1h |  |  | start no earlier than 2021-04-28 08:00 | 3D аниматор; Web-дизайнер; Ведущий программист; Мультимедиа-корреспондент; Системный аналитик; Технический писатель; Художник-дизайнер | 7h | 7h | 61 | 61 | 61 |
| 44 | 7.10 | Совещание 10 | 1h | 2021-05-05 09:00 A | 2021-05-05 10:00 A |  | 100% |  | 2021-05-04 09:00 | 2021-05-04 10:00 | 1h |  |  | start no earlier than 2021-05-05 08:00 | 3D аниматор; Web-дизайнер; Ведущий программист; Мультимедиа-корреспондент; Системный аналитик; Технический писатель; Художник-дизайнер | 7h | 7h | 61 | 61 | 61 |
| 45 | 7.11 | Совещание 11 | 1h | 2021-05-12 09:00 | 2021-05-12 10:00 |  |  |  | 2021-05-11 09:00 | 2021-05-11 10:00 | 1h | 64.88d |  | start no earlier than 2021-05-12 08:00 | 3D аниматор; Web-дизайнер; Ведущий программист; Мультимедиа-корреспондент; Системный аналитик; Технический писатель; Художник-дизайнер | 7h |  | 61 | 61 |  |
| 46 | 7.12 | Совещание 12 | 1h | 2021-05-19 09:00 | 2021-05-19 10:00 |  |  |  | 2021-05-17 09:00 | 2021-05-17 10:00 | 1h | 59.88d |  | start no earlier than 2021-05-19 08:00 | 3D аниматор; Web-дизайнер; Ведущий программист; Мультимедиа-корреспондент; Системный аналитик; Технический писатель; Художник-дизайнер | 7h |  | 61 | 61 |  |
| 47 | 7.13 | Совещание 13 | 1h | 2021-05-26 09:00 | 2021-05-26 10:00 |  |  |  | 2021-05-24 09:00 | 2021-05-24 10:00 | 1h | 54.88d |  | start no earlier than 2021-05-26 08:00 | 3D аниматор; Web-дизайнер; Ведущий программист; Мультимедиа-корреспондент; Системный аналитик; Технический писатель; Художник-дизайнер | 7h |  | 61 | 61 |  |
| 48 | 7.14 | Совещание 14 | 1h | 2021-06-02 09:00 | 2021-06-02 10:00 |  |  |  | 2021-05-31 09:00 | 2021-05-31 10:00 | 1h | 49.88d |  | start no earlier than 2021-06-02 08:00 | 3D аниматор; Web-дизайнер; Ведущий программист; Мультимедиа-корреспондент; Системный аналитик; Технический писатель; Художник-дизайнер | 7h |  | 61 | 61 |  |
| 49 | 7.15 | Совещание 15 | 1h | 2021-06-09 09:00 | 2021-06-09 10:00 |  |  |  | 2021-06-07 09:00 | 2021-06-07 10:00 | 1h | 44.88d |  | start no earlier than 2021-06-09 08:00 | 3D аниматор; Web-дизайнер; Ведущий программист; Мультимедиа-корреспондент; Системный аналитик; Технический писатель; Художник-дизайнер | 7h |  | 61 | 61 |  |
| 50 | 7.16 | Совещание 16 | 1h | 2021-06-16 09:00 | 2021-06-16 10:00 |  |  |  | 2021-06-15 09:00 | 2021-06-15 10:00 | 1h | 40.88d |  | start no earlier than 2021-06-16 08:00 | 3D аниматор; Web-дизайнер; Ведущий программист; Мультимедиа-корреспондент; Системный аналитик; Технический писатель; Художник-дизайнер | 7h |  | 61 | 61 |  |
| 51 | 7.17 | Совещание 17 | 1h | 2021-06-23 09:00 | 2021-06-23 10:00 |  |  |  | 2021-06-21 09:00 | 2021-06-21 10:00 | 1h | 35.88d |  | start no earlier than 2021-06-23 08:00 | 3D аниматор; Web-дизайнер; Ведущий программист; Мультимедиа-корреспондент; Системный аналитик; Технический писатель; Художник-дизайнер | 7h |  | 61 | 61 |  |
| 52 | 7.18 | Совещание 18 | 1h | 2021-06-30 09:00 | 2021-06-30 10:00 |  |  |  | 2021-06-28 09:00 | 2021-06-28 10:00 | 1h | 30.88d |  | start no earlier than 2021-06-30 08:00 | 3D аниматор; Web-дизайнер; Ведущий программист; Мультимедиа-корреспондент; Системный аналитик; Технический писатель; Художник-дизайнер | 7h |  | 61 | 61 |  |
| 53 | 7.19 | Совещание 19 | 1h | 2021-07-07 09:00 | 2021-07-07 10:00 |  |  |  | 2021-07-05 09:00 | 2021-07-05 10:00 | 1h | 25.88d |  | start no earlier than 2021-07-07 08:00 | 3D аниматор; Web-дизайнер; Ведущий программист; Мультимедиа-корреспондент; Системный аналитик; Технический писатель; Художник-дизайнер | 7h |  | 61 | 61 |  |
| 54 | 7.20 | Совещание 20 | 1h | 2021-07-14 09:00 | 2021-07-14 10:00 |  |  |  | 2021-07-12 09:00 | 2021-07-12 10:00 | 1h | 20.88d |  | start no earlier than 2021-07-14 08:00 | 3D аниматор; Web-дизайнер; Ведущий программист; Мультимедиа-корреспондент; Системный аналитик; Технический писатель; Художник-дизайнер | 7h |  | 61 | 61 |  |
| 55 | 7.21 | Совещание 21 | 1h | 2021-07-21 09:00 | 2021-07-21 10:00 |  |  |  | 2021-07-19 09:00 | 2021-07-19 10:00 | 1h | 15.88d |  | start no earlier than 2021-07-21 08:00 | 3D аниматор; Web-дизайнер; Ведущий программист; Мультимедиа-корреспондент; Системный аналитик; Технический писатель; Художник-дизайнер | 7h |  | 61 | 61 |  |
| 56 | 7.22 | Совещание 22 | 1h | 2021-07-28 09:00 | 2021-07-28 10:00 |  |  |  | 2021-07-26 09:00 | 2021-07-26 10:00 | 1h | 10.88d |  | start no earlier than 2021-07-28 08:00 | 3D аниматор; Web-дизайнер; Ведущий программист; Мультимедиа-корреспондент; Системный аналитик; Технический писатель; Художник-дизайнер | 7h |  | 61 | 61 |  |
| 57 | 7.23 | Совещание 23 | 1h | 2021-08-04 09:00 | 2021-08-04 10:00 |  |  |  | 2021-08-02 09:00 | 2021-08-02 10:00 | 1h | 5.88d |  | start no earlier than 2021-08-04 08:00 | 3D аниматор; Web-дизайнер; Ведущий программист; Мультимедиа-корреспондент; Системный аналитик; Технический писатель; Художник-дизайнер | 7h |  | 61 | 61 |  |
| 58 | 7.24 | Совещание 24 | 1h | 2021-08-11 09:00 | 2021-08-11 10:00 |  |  |  | 2021-08-09 09:00 | 2021-08-09 10:00 | 1h | 0.88d |  | start no earlier than 2021-08-11 08:00 | 3D аниматор; Web-дизайнер; Ведущий программист; Мультимедиа-корреспондент; Системный аналитик; Технический писатель; Художник-дизайнер | 7h |  | 61 | 61 |  |
