# Lab3.2

Schedule from MS Project, 2022-03-01 to 2022-09-22, costs in p..
Команда разработчиков из 16 человек / длительности : 6 месяцев / Бюджет проекта: 50 000 рублей

## Calendars

- Standard: Mon-Fri 08:00-12:00, 13:00-17:00; Sat-Sun off. Exceptions (off unless hours are given): 2022-03-05 to 2022-03-08 (Международный женский день), 2022-04-30 to 2022-05-02 (Праздник Весны и Труда), 2022-05-07 to 2022-05-10 (День Победы), 2022-06-11 to 2022-06-13 (День России).

## Resources

| Resource | Group | Rate | Cost per use |
| --- | --- | --- | --- |
| Ведущий программист | Программирование | 10 | 100 |
| Программист#1 | Программирование | 7 | 50 |
| Программист#2 | Программирование | 7 | 50 |
| Программист#3 | Программирование | 7 | 50 |
| Программист#4 | Анализ | 7 | 50 |
| Системный аналитик | Дизайн | 20 | 300 |
| Художник-дизайнер | Документация | 8 | 70 |
| Технический писатель | Internet | 5 | 20 |
| Web-дизайнер | Дизайн | 7 | 50 |
| 3D аниматор | М-Медиа | 8 | 70 |
| Мультимедиа-корреспондент | Ввод данных | 3 | 20 |
| Наборщик данных#1 | Ввод данных | 2 | 10 |
| Наборщик данных#2 | Ввод данных | 2 | 10 |
| Наборщик данных#3 | Ввод данных | 2 | 10 |
| Наборщик данных#4 | Ввод данных | 2 | 10 |
| Наборщик данных#5 | Ввод данных | 2 | 10 |
| Дополнительный сервер | Оборудование | 2 |  |

## Schedule

| ID | WBS | Task | Type | Duration | Start | Finish | Predecessors | Total slack | Free slack | Resources | Work | Cost |
| --- | --- | --- | --- | --- | --- | --- | --- | --- | --- | --- | --- | --- |
| 1 | 1 | Начало проекта | milestone | 0w | 2022-03-01 09:00 | 2022-03-01 09:00 |  | 70.04d | 0d |  |  |  |
| 2 | 2 | **Разработка дизайна интерфейса** |  | 110.79d | 2022-03-01 09:00 | 2022-08-10 16:20 | 1 | 0d |  |  | 560h | 4,550 |
| 3 | 2.1 | **Создание интерфейса** |  | 25.75d | 2022-03-01 09:00 | 2022-04-07 16:00 |  | 70.04d | 0d |  | 320h | 2,770 |
| 4 | 2.1.1 | Разработка 2D графических элементов |  | 3w | 2022-03-01 09:00 | 2022-03-24 10:00 |  | 70.04d | 0d | Художник-дизайнер | 120h | 1,030 |
| 5 | 2.1.2 | Разработка 3D графических элементов |  | 2w | 2022-03-01 09:00 | 2022-03-17 12:00 | 4SS | 70.04d | 0d | 3D аниматор | 80h | 710 |
| 6 | 2.1.3 | Создание заставки |  | 3w | 2022-03-17 13:00 | 2022-04-07 16:00 | 5 | 70.04d |  | 3D аниматор | 120h | 1,030 |
| 7 | 2.2 | Программирование интерфейса |  | 3w | 2022-07-20 16:20 | 2022-08-10 16:20 | 3, 12 | 0d |  | Программист#3; Программист#4 | 240h | 1,780 |
| 8 | 3 | **Построение базы объектов** |  | 85.05d | 2022-03-24 09:48 | 2022-07-27 10:12 |  | 40.98d |  | Дополнительный сервер | 5720.4h | 14,530.8 |
| 9 | 3.1 | Анализ и построение структуры базы объектов |  | 2w | 2022-03-24 09:48 | 2022-04-07 10:12 |  | 40.98d | 0d | Системный аналитик | 80h | 1,900 |
| 10 | 3.2 | Программирование средств обработки базы объектов |  | 3w | 2022-04-07 10:12 | 2022-04-28 10:12 | 9 | 40.98d | 0d | Программист#3; Программист#4 | 240h | 1,780 |
| 11 | 3.3 | Наполнение базы объектов |  | 12w | 2022-04-28 10:12 | 2022-07-27 10:12 | 10 | 40.98d |  | Наборщик данных#1; Наборщик данных#2; Наборщик данных#3; Наборщик данных#4; Наборщик данных#5 | 2400h | 4,850 |
| 12 | 4 | **Создание ядра GIS** |  | 95.79d | 2022-03-01 09:00 | 2022-07-20 16:20 |  | 0d |  |  | 1880h | 17,680 |
| 13 | 4.1 | Анализ и проектирование ядра |  | 3.01w | 2022-03-01 09:00 | 2022-03-24 10:20 |  | 0d |  | Системный аналитик; Ведущий программист | 240h | 4,000 |
| 14 | 4.2 | Создание модели ядра |  | 5.04w | 2022-03-24 10:20 | 2022-04-28 12:00 | 13 | 0d |  | Ведущий программист; Программист#1 | 400h | 3,550 |
| 15 | 4.3 | Тестирование модели ядра |  | 1w | 2022-04-28 13:00 | 2022-05-06 12:00 | 14 | 0d |  | Программист#1 | 40h | 330 |
| 16 | 4.4 | Создание рабочей версии ядра |  | 10.08w | 2022-05-06 13:00 | 2022-07-20 16:20 | 15 | 0d |  | Ведущий программист; Программист#1; Программист#2 | 1200h | 9,800 |
| 17 | 5 | Создание мультимедиа – наполнения |  | 6w | 2022-04-07 16:00 | 2022-05-24 16:51 | 3 | 85.27d |  | Мультимедиа-корреспондент | 240h | 740 |
| 18 | 6 | Создание справочной системы |  | 2w | 2022-08-19 16:50 | 2022-09-05 08:10 | 7 | 13.23d |  | Технический писатель | 80h | 420 |
| 19 | 7 | **Создание руководства пользователя** |  | 17.06d | 2022-07-27 16:20 | 2022-08-19 16:50 | 7FS-10d | 0d |  |  | 160h | 1,010 |
| 20 | 7.1 | Разработка дизайна руководства |  | 1w | 2022-07-27 16:20 | 2022-08-03 16:20 |  | 0d |  | Художник-дизайнер | 40h | 390 |
| 21 | 7.2 | Написание руководства пользователя |  | 3w | 2022-07-29 16:20 | 2022-08-19 16:50 | 20SS+2d | 0d |  | Технический писатель | 120h | 620 |
| 22 | 8 | **Создание web–сайта и поддержка** |  | 23.17d | 2022-07-29 16:20 | 2022-09-01 08:40 |  | 0d |  |  | 248h | 2,106 |
| 23 | 8.1 | Разработка структуры сайта |  | 1d | 2022-07-29 16:20 | 2022-08-01 16:20 | 21SS | 0d |  | Web-дизайнер | 8h | 106 |
| 24 | 8.2 | Разработка дизайна сайта |  | 1.4w | 2022-08-01 16:20 | 2022-08-10 16:20 | 23 | 0d |  | Web-дизайнер; Художник-дизайнер; 3D аниматор | 120h | 1,110 |
| 25 | 8.3 | Наполнение сайта |  | 3w | 2022-08-10 16:20 | 2022-09-01 08:40 | 24 | 0d |  | Web-дизайнер | 120h | 890 |
| 26 | 9 | Тестирование сайта |  | 4.03w | 2022-08-25 08:40 | 2022-09-22 10:00 | 22FS-1w | 0d |  | Ведущий программист; Программист#1; Программист#2 | 480h | 4,040 |
| 27 | 10 | Сдача сайта в эксплуатацию | milestone | 0w | 2022-09-22 10:00 | 2022-09-22 10:00 | 26 | 0d |  |  |  |  |

| ID | WBS | Task | Duration | Start | Finish | Total slack | Constraint |
| --- | --- | --- | --- | --- | --- | --- | --- |
| 28 | 11 | **Еженедельное совещание** | 139.12d | 2022-03-02 09:00 | 2022-09-21 10:00 | 1d |  |
| 29 | 11.1 | Еженедельное совещание 1 | 1h | 2022-03-02 09:00 | 2022-03-02 10:00 | 140d | start no earlier than 2022-03-02 09:00 |
| 30 | 11.2 | Еженедельное совещание 2 | 1h | 2022-03-09 09:00 | 2022-03-09 10:00 | 137d | start no earlier than 2022-03-09 09:00 |
| 31 | 11.3 | Еженедельное совещание 3 | 1h | 2022-03-16 09:00 | 2022-03-16 10:00 | 132d | start no earlier than 2022-03-16 09:00 |
| 32 | 11.4 | Еженедельное совещание 4 | 1h | 2022-03-23 09:00 | 2022-03-23 10:00 | 127d | start no earlier than 2022-03-23 09:00 |
| 33 | 11.5 | Еженедельное совещание 5 | 1h | 2022-03-30 09:00 | 2022-03-30 10:00 | 122d | start no earlier than 2022-03-30 09:00 |
| 34 | 11.6 | Еженедельное совещание 6 | 1h | 2022-04-06 09:00 | 2022-04-06 10:00 | 117d | start no earlier than 2022-04-06 09:00 |
| 35 | 11.7 | Еженедельное совещание 7 | 1h | 2022-04-13 09:00 | 2022-04-13 10:00 | 112d | start no earlier than 2022-04-13 09:00 |
| 36 | 11.8 | Еженедельное совещание 8 | 1h | 2022-04-20 09:00 | 2022-04-20 10:00 | 107d | start no earlier than 2022-04-20 09:00 |
| 37 | 11.9 | Еженедельное совещание 9 | 1h | 2022-04-27 09:00 | 2022-04-27 10:00 | 102d | start no earlier than 2022-04-27 09:00 |
| 38 | 11.10 | Еженедельное совещание 10 | 1h | 2022-05-04 09:00 | 2022-05-04 10:00 | 98d | start no earlier than 2022-05-04 09:00 |
| 39 | 11.11 | Еженедельное совещание 11 | 1h | 2022-05-11 09:00 | 2022-05-11 10:00 | 95d | start no earlier than 2022-05-11 09:00 |
| 40 | 11.12 | Еженедельное совещание 12 | 1h | 2022-05-18 09:00 | 2022-05-18 10:00 | 90d | start no earlier than 2022-05-18 09:00 |
| 41 | 11.13 | Еженедельное совещание 13 | 1h | 2022-05-25 09:00 | 2022-05-25 10:00 | 85d | start no earlier than 2022-05-25 09:00 |
| 42 | 11.14 | Еженедельное совещание 14 | 1h | 2022-06-01 09:00 | 2022-06-01 10:00 | 80d | start no earlier than 2022-06-01 09:00 |
| 43 | 11.15 | Еженедельное совещание 15 | 1h | 2022-06-08 09:00 | 2022-06-08 10:00 | 75d | start no earlier than 2022-06-08 09:00 |
| 44 | 11.16 | Еженедельное совещание 16 | 1h | 2022-06-15 09:00 | 2022-06-15 10:00 | 71d | start no earlier than 2022-06-15 09:00 |
| 45 | 11.17 | Еженедельное совещание 17 | 1h | 2022-06-22 09:00 | 2022-06-22 10:00 | 66d | start no earlier than 2022-06-22 09:00 |
| 46 | 11.18 | Еженедельное совещание 18 | 1h | 2022-06-29 09:00 | 2022-06-29 10:00 | 61d | start no earlier than 2022-06-29 09:00 |
| 47 | 11.19 | Еженедельное совещание 19 | 1h | 2022-07-06 09:00 | 2022-07-06 10:00 | 56d | start no earlier than 2022-07-06 09:00 |
| 48 | 11.20 | Еженедельное совещание 20 | 1h | 2022-07-13 09:00 | 2022-07-13 10:00 | 51d | start no earlier than 2022-07-13 09:00 |
| 49 | 11.21 | Еженедельное совещание 21 | 1h | 2022-07-20 09:00 | 2022-07-20 10:00 | 46d | start no earlier than 2022-07-20 09:00 |
| 50 | 11.22 | Еженедельное совещание 22 | 1h | 2022-07-27 09:00 | 2022-07-27 10:00 | 41d | start no earlier than 2022-07-27 09:00 |
| 51 | 11.23 | Еженедельное совещание 23 | 1h | 2022-08-03 09:00 | 2022-08-03 10:00 | 36d | start no earlier than 2022-08-03 09:00 |
| 52 | 11.24 | Еженедельное совещание 24 | 1h | 2022-08-10 09:00 | 2022-08-10 10:00 | 31d | start no earlier than 2022-08-10 09:00 |
| 53 | 11.25 | Еженедельное совещание 25 | 1h | 2022-08-17 09:00 | 2022-08-17 10:00 | 26d | start no earlier than 2022-08-17 09:00 |
| 54 | 11.26 | Еженедельное совещание 26 | 1h | 2022-08-24 09:00 | 2022-08-24 10:00 | 21d | start no earlier than 2022-08-24 09:00 |
| 55 | 11.27 | Еженедельное совещание 27 | 1h | 2022-08-31 09:00 | 2022-08-31 10:00 | 16d | start no earlier than 2022-08-31 09:00 |
| 56 | 11.28 | Еженедельное совещание 28 | 1h | 2022-09-07 09:00 | 2022-09-07 10:00 | 11d | start no earlier than 2022-09-07 09:00 |
| 57 | 11.29 | Еженедельное совещание 29 | 1h | 2022-09-14 09:00 | 2022-09-14 10:00 | 6d | start no earlier than 2022-09-14 09:00 |
| 58 | 11.30 | Еженедельное совещание 30 | 1h | 2022-09-21 09:00 | 2022-09-21 10:00 | 1d | start no earlier than 2022-09-21 09:00 |
