# Lab5_3

Schedule from MS Project, 2022-03-01 to 2022-08-25, costs in p..
Команда разработчиков из 16 человек / длительности : 6 месяцев / Бюджет проекта: 50 000 рублей

## Calendars

- Standard: Mon-Fri 08:00-12:00, 13:00-17:00; Sat-Sun off. Exceptions (off unless hours are given): 2022-03-05 to 2022-03-08 (Международный женский день), 2022-04-30 to 2022-05-02 (Праздник Весны и Труда), 2022-05-07 to 2022-05-10 (День Победы), 2022-06-11 to 2022-06-13 (День России).

## Resources

| Resource | Group | Rate | Cost per use |
| --- | --- | --- | --- |
| Ведущий программист | Программирование | 10 | 100 |
| Программист#1 | Программирование | 7 | 50 |
| Программист#2 | Программирование | 7 | 50 |
| Программист#3 | Программирование | 7 | 50 |
| Программист#4 | Программирование | 7 | 50 |
| Системный аналитик | Анализ | 20 | 300 |
| Художник-дизайнер | Дизайн | 8 | 70 |
| Технический писатель | Документация | 5 | 20 |
| Web-дизайнер | Internet | 7 | 50 |
| 3D аниматор | Дизайн | 8 | 70 |
| Мультимедиа-корреспондент | М-Медиа | 3 | 20 |
| Наборщик данных#1 | Ввод данных | 2 | 10 |
| Наборщик данных#2 | Ввод данных | 2 | 10 |
| Наборщик данных#3 | Ввод данных | 2 | 10 |
| Наборщик данных#4 | Ввод данных | 2 | 10 |
| Наборщик данных#5 | Ввод данных | 2 | 10 |
| Дополнительный сервер | Оборудование | 2 |  |

## Schedule

| ID | WBS | Task | Type | Duration | Start | Finish | Predecessors | Baseline start | Baseline finish | Baseline duration | Total slack | Free slack | Resources | Work | Cost | Baseline cost |
| --- | --- | --- | --- | --- | --- | --- | --- | --- | --- | --- | --- | --- | --- | --- | --- | --- |
| 1 | 1 | Начало проекта | milestone | 0w | 2022-03-01 09:00 | 2022-03-01 09:00 |  | 2022-03-01 09:00 | 2022-03-01 09:00 | 0w | 37.59d | 0d |  |  |  |  |
| 2 | 2 | **Разработка** |  | 108.06d | 2022-03-01 09:00 | 2022-08-08 09:30 |  |  |  |  | 13.45d |  |  | 5373.4h | 29,308.88 |  |
| 3 | 2.1 | **Построение базы объектов** |  | 13.55d | 2022-04-11 11:05 | 2022-04-28 16:29 | 10 | 2022-03-24 14:36 | 2022-07-29 09:05 | 86.44d | 20.7d | 0d | Дополнительный сервер | 653.4h | 3,706.8 | 15,615 |
| 4 | 2.1.1 | Программирование средств обработки базы объектов |  | 2.71w | 2022-04-11 11:05 | 2022-04-28 16:29 | 26 | 2022-04-11 09:05 | 2022-05-03 09:05 | 3w | 20.7d | 0d | Программист#3; Программист#4; Программист#1; Программист#2 | 240h | 1,880 | 1,780 |
| 5 | 2.2 | Наполнение базы объектов |  | 12w | 2022-04-28 16:29 | 2022-07-27 16:29 | 4, 26 | 2022-05-03 09:05 | 2022-07-29 09:05 | 12w | 20.7d |  | Наборщик данных#1; Наборщик данных#2; Наборщик данных#3; Наборщик данных#4; Наборщик данных#5 | 2400h | 4,850 | 4,850 |
| 6 | 2.3 | Сдача сайта в эксплуатацию | milestone | 0w | 2022-07-11 15:12 | 2022-07-11 15:12 | 19 | 2022-08-10 14:36 | 2022-08-10 14:36 | 0w | 32.86d |  |  |  |  |  |
| 7 | 2.4 | **Создание интерфейса** |  | 57.06d | 2022-03-01 09:00 | 2022-05-26 09:29 |  | 2022-03-01 09:00 | 2022-04-07 16:00 | 25.75d | 32.86d | 0d |  | 320h | 3,770 | 2,770 |
| 8 | 2.4.1 | **Разработка дизайна интерфейса** |  | 57.06d | 2022-03-01 09:00 | 2022-05-26 09:29 | 1 | 2022-03-01 09:00 | 2022-06-30 08:42 | 80.96d | 32.86d |  |  | 320h | 3,770 | 5,650 |
| 9 | 2.4.1.1 | Разработка 2D графических элементов |  | 3w | 2022-03-01 09:00 | 2022-03-24 14:45 |  | 2022-03-01 09:00 | 2022-03-24 14:45 | 3w | 37.59d | 0d | Художник-дизайнер | 120h | 1,030 | 1,030 |
| 10 | 2.4.1.2 | Разработка 3D графических элементов |  | 2w | 2022-03-01 09:00 | 2022-03-17 12:00 | 9SS | 2022-03-01 09:00 | 2022-03-17 12:00 | 2w | 37.59d | 16.89d | 3D аниматор | 80h | 710 | 710 |
| 11 | 2.4.1.3 | Создание заставки |  | 3w | 2022-04-28 16:29 | 2022-05-26 09:29 | 3 | 2022-03-17 13:00 | 2022-04-07 16:00 | 3w | 32.86d |  | 3D аниматор | 120h | 1,030 | 1,030 |
| 12 | 2.5 | Программирование интерфейса |  | 1.5w | 2022-07-27 14:30 | 2022-08-08 09:30 | 15 | 2022-06-20 13:42 | 2022-06-30 08:42 | 1.5w | 3.45d | 0d | Программист#3; Программист#4; Программист#1; Программист#2 | 240h | 1,880 | 1,880 |
| 13 | 2.6 | **Создание web–сайта и поддержка** |  | 18.45d | 2022-04-14 10:14 | 2022-05-13 14:48 |  | 2022-06-20 08:42 | 2022-07-28 10:20 | 28.2d | 0.64d |  |  | 120h | 890 | 2,106 |
| 14 | 2.6.1 | Наполнение сайта |  | 3w | 2022-04-14 10:14 | 2022-05-13 14:48 | 22, 23 | 2022-07-01 15:45 | 2022-07-28 10:20 | 3w | 0.64d |  | Web-дизайнер | 120h | 890 | 890 |
| 15 | 2.7 | **Создание ядра GIS** |  | 84.94d | 2022-03-24 15:00 | 2022-07-27 14:30 |  | 2022-03-01 09:00 | 2022-06-20 13:42 | 73.46d | 3.45d | 0d |  | 1640h | 14,212.08 | 18,212.08 |
| 16 | 2.7.1 | Создание модели ядра |  | 2.03w | 2022-03-24 15:00 | 2022-04-07 16:05 | 25 | 2022-03-24 15:00 | 2022-04-07 16:05 | 2.03w | 3.45d | 0d | Ведущий программист; Программист#1; Программист#2; Программист#3; Программист#4 | 400h | 3,335.3 | 3,335.3 |
| 17 | 2.7.2 | Тестирование модели ядра |  | 0.25w | 2022-04-07 16:05 | 2022-04-11 09:05 | 16, 25 | 2022-04-07 16:05 | 2022-04-11 09:05 | 0.25w | 3.45d | 0d | Программист#1; Программист#3; Программист#2; Программист#4 | 40h | 480 | 480 |
| 18 | 2.7.3 | Создание рабочей версии ядра |  | 14.51w | 2022-04-11 09:05 | 2022-07-27 14:30 | 17, 25 | 2022-04-11 09:05 | 2022-06-20 13:42 | 9.29w | 3.45d |  | Ведущий программист; Программист#1; Программист#2; Программист#3; Программист#4 | 1200h | 9,396.78 | 9,396.78 |
| 19 | 3 | **Дизайн** |  | 84.43d | 2022-03-09 10:45 | 2022-07-11 15:12 |  |  |  |  | 0.64d | 0d |  | 408h | 2,346 |  |
| 20 | 3.1 | Создание мультимедиа – наполнения |  | 6w | 2022-05-26 09:29 | 2022-07-11 15:12 | 7 | 2022-04-07 16:00 | 2022-05-25 15:43 | 6w | 32.86d |  | Мультимедиа-корреспондент | 240h | 740 | 740 |
| 21 | 3.2 | Разработка дизайна руководства |  | 0.9w | 2022-03-09 10:45 | 2022-04-01 13:10 |  | 2022-06-16 08:42 | 2022-06-23 15:02 | 1w | 0.64d | 0d | Художник-дизайнер | 40h | 390 | 390 |
| 22 | 3.3 | Разработка дизайна сайта |  | 1.6w | 2022-04-01 13:10 | 2022-04-14 10:14 | 23, 21 | 2022-06-21 08:42 | 2022-07-01 15:45 | 1.47w | 0.64d | 0d | Web-дизайнер; Художник-дизайнер; 3D аниматор | 120h | 1,110 | 1,110 |
| 23 | 3.4 | Разработка структуры сайта |  | 1d | 2022-03-11 10:45 | 2022-03-14 10:45 | 28SS | 2022-06-20 08:42 | 2022-06-21 08:42 | 1d | 14.82d | 14.18d | Web-дизайнер | 8h | 106 | 106 |
| 24 | 4 | **Анализ** |  | 26.12d | 2022-03-01 09:00 | 2022-04-08 10:00 |  |  |  |  | 3.45d |  |  | 320h | 5,900 |  |
| 25 | 4.1 | Анализ и проектирование ядра |  | 3.01w | 2022-03-01 09:00 | 2022-03-24 15:00 |  | 2022-03-01 09:00 | 2022-03-24 15:00 | 3.01w | 3.45d | 0d | Системный аналитик; Ведущий программист | 240h | 4,000 | 4,000 |
| 26 | 4.2 | Анализ и построение структуры базы объектов |  | 2w | 2022-03-24 14:36 | 2022-04-08 10:00 |  | 2022-03-24 14:36 | 2022-04-07 17:00 | 2w | 19.75d | 0d | Системный аналитик | 80h | 1,900 | 1,900 |

| ID | WBS | Task | Duration | Start | Finish | Predecessors | Baseline start | Baseline finish | Baseline duration | Total slack | Free slack | Constraint | Resources | Work | Cost | Baseline cost |
| --- | --- | --- | --- | --- | --- | --- | --- | --- | --- | --- | --- | --- | --- | --- | --- | --- |
| 27 | 5 | **Документация** | 113.91d | 2022-03-11 10:45 | 2022-08-24 10:00 |  |  |  |  | 1.39d |  |  |  | 200h | 1,040 |  |
| 28 | 5.1 | Написание руководства пользователя | 3w | 2022-03-11 10:45 | 2022-04-06 14:15 | 21SS+2d | 2022-06-20 08:42 | 2022-07-14 10:12 | 3w | 14.82d | 0d |  | Технический писатель | 120h | 620 | 620 |
| 29 | 5.2 | Создание справочной системы | 1.94w | 2022-08-10 10:00 | 2022-08-24 10:00 | 12 | 2022-07-13 08:00 | 2022-08-01 16:04 | 2w | 1.39d |  | start no earlier than 2022-08-10 10:00 | Технический писатель | 80h | 420 | 420 |
| 30 | 5.3 | Создание руководства пользователя | 1d | 2022-07-25 09:30 | 2022-07-26 09:30 | 12FS-10d | 2022-06-16 08:42 | 2022-07-14 10:12 | 20.19d | 22.45d |  |  |  |  |  | 1,010 |
| 31 | 6 | **Тестирование** | 77.27d | 2022-05-05 10:56 | 2022-08-25 14:05 |  |  |  |  | 0d |  |  |  | 480h | 3,924.84 |  |
| 32 | 6.1 | Тестирование сайта | 5.44w | 2022-05-05 10:56 | 2022-08-25 14:05 | 13FS-1w | 2022-07-21 10:20 | 2022-08-10 14:36 | 2.82w | 0d |  | start no earlier than 2022-05-05 10:56 | Ведущий программист; Программист#1; Программист#2; Программист#3; Программист#4 | 480h | 3,924.84 | 3,924.84 |
| 33 | 7 | **Еженедельное совещание** | 109.12d | 2022-03-02 09:00 | 2022-08-10 10:00 |  | 2022-03-02 09:00 | 2022-08-10 10:00 | 109.12d | 11.39d |  |  |  | 168h | 1,464 | 1,464 |
| 34 | 7.1 | Еженедельное совещание 1 | 1h | 2022-03-02 09:00 | 2022-03-02 10:00 |  | 2022-03-02 09:00 | 2022-03-02 10:00 | 1h | 120.39d |  | start no earlier than 2022-03-02 09:00 | 3D аниматор; Web-дизайнер; Ведущий программист; Мультимедиа-корреспондент; Системный аналитик; Технический писатель; Художник-дизайнер | 7h | 61 | 61 |
| 35 | 7.2 | Еженедельное совещание 2 | 1h | 2022-03-09 09:00 | 2022-03-09 10:00 |  | 2022-03-09 09:00 | 2022-03-09 10:00 | 1h | 117.39d |  | start no earlier than 2022-03-09 09:00 | 3D аниматор; Web-дизайнер; Ведущий программист; Мультимедиа-корреспондент; Системный аналитик; Технический писатель; Художник-дизайнер | 7h | 61 | 61 |
| 36 | 7.3 | Еженедельное совещание 3 | 1h | 2022-03-16 09:00 | 2022-03-16 10:00 |  | 2022-03-16 09:00 | 2022-03-16 10:00 | 1h | 112.39d |  | start no earlier than 2022-03-16 09:00 | 3D аниматор; Web-дизайнер; Ведущий программист; Мультимедиа-корреспондент; Системный аналитик; Технический писатель; Художник-дизайнер | 7h | 61 | 61 |
| 37 | 7.4 | Еженедельное совещание 4 | 1h | 2022-03-23 09:00 | 2022-03-23 10:00 |  | 2022-03-23 09:00 | 2022-03-23 10:00 | 1h | 107.39d |  | start no earlier than 2022-03-23 09:00 | 3D аниматор; Web-дизайнер; Ведущий программист; Мультимедиа-корреспондент; Системный аналитик; Технический писатель; Художник-дизайнер | 7h | 61 | 61 |
| 38 | 7.5 | Еженедельное совещание 5 | 1h | 2022-03-30 09:00 | 2022-03-30 10:00 |  | 2022-03-30 09:00 | 2022-03-30 10:00 | 1h | 102.39d |  | start no earlier than 2022-03-30 09:00 | 3D аниматор; Web-дизайнер; Ведущий программист; Мультимедиа-корреспондент; Системный аналитик; Технический писатель; Художник-дизайнер | 7h | 61 | 61 |
| 39 | 7.6 | Еженедельное совещание 6 | 1h | 2022-04-06 09:00 | 2022-04-06 10:00 |  | 2022-04-06 09:00 | 2022-04-06 10:00 | 1h | 97.39d |  | start no earlier than 2022-04-06 09:00 | 3D аниматор; Web-дизайнер; Ведущий программист; Мультимедиа-корреспондент; Системный аналитик; Технический писатель; Художник-дизайнер | 7h | 61 | 61 |
| 40 | 7.7 | Еженедельное совещание 7 | 1h | 2022-04-13 09:00 | 2022-04-13 10:00 |  | 2022-04-13 09:00 | 2022-04-13 10:00 | 1h | 92.39d |  | start no earlier than 2022-04-13 09:00 | 3D аниматор; Web-дизайнер; Ведущий программист; Мультимедиа-корреспондент; Системный аналитик; Технический писатель; Художник-дизайнер | 7h | 61 | 61 |
| 41 | 7.8 | Еженедельное совещание 8 | 1h | 2022-04-20 09:00 | 2022-04-20 10:00 |  | 2022-04-20 09:00 | 2022-04-20 10:00 | 1h | 87.39d |  | start no earlier than 2022-04-20 09:00 | 3D аниматор; Web-дизайнер; Ведущий программист; Мультимедиа-корреспондент; Системный аналитик; Технический писатель; Художник-дизайнер | 7h | 61 | 61 |
| 42 | 7.9 | Еженедельное совещание 9 | 1h | 2022-04-27 09:00 | 2022-04-27 10:00 |  | 2022-04-27 09:00 | 2022-04-27 10:00 | 1h | 82.39d |  | start no earlier than 2022-04-27 09:00 | 3D аниматор; Web-дизайнер; Ведущий программист; Мультимедиа-корреспондент; Системный аналитик; Технический писатель; Художник-дизайнер | 7h | 61 | 61 |
| 43 | 7.10 | Еженедельное совещание 10 | 1h | 2022-05-04 09:00 | 2022-05-04 10:00 |  | 2022-05-04 09:00 | 2022-05-04 10:00 | 1h | 78.39d |  | start no earlier than 2022-05-04 09:00 | 3D аниматор; Web-дизайнер; Ведущий программист; Мультимедиа-корреспондент; Системный аналитик; Технический писатель; Художник-дизайнер | 7h | 61 | 61 |
| 44 | 7.11 | Еженедельное совещание 11 | 1h | 2022-05-11 09:00 | 2022-05-11 10:00 |  | 2022-05-11 09:00 | 2022-05-11 10:00 | 1h | 75.39d |  | start no earlier than 2022-05-11 09:00 | 3D аниматор; Web-дизайнер; Ведущий программист; Мультимедиа-корреспондент; Системный аналитик; Технический писатель; Художник-дизайнер | 7h | 61 | 61 |
| 45 | 7.12 | Еженедельное совещание 12 | 1h | 2022-05-18 09:00 | 2022-05-18 10:00 |  | 2022-05-18 09:00 | 2022-05-18 10:00 | 1h | 70.39d |  | start no earlier than 2022-05-18 09:00 | 3D аниматор; Web-дизайнер; Ведущий программист; Мультимедиа-корреспондент; Системный аналитик; Технический писатель; Художник-дизайнер | 7h | 61 | 61 |
| 46 | 7.13 | Еженедельное совещание 13 | 1h | 2022-05-25 09:00 | 2022-05-25 10:00 |  | 2022-05-25 09:00 | 2022-05-25 10:00 | 1h | 65.39d |  | start no earlier than 2022-05-25 09:00 | 3D аниматор; Web-дизайнер; Ведущий программист; Мультимедиа-корреспондент; Системный аналитик; Технический писатель; Художник-дизайнер | 7h | 61 | 61 |
| 47 | 7.14 | Еженедельное совещание 14 | 1h | 2022-06-01 09:00 | 2022-06-01 10:00 |  | 2022-06-01 09:00 | 2022-06-01 10:00 | 1h | 60.39d |  | start no earlier than 2022-06-01 09:00 | 3D аниматор; Web-дизайнер; Ведущий программист; Мультимедиа-корреспондент; Системный аналитик; Технический писатель; Художник-дизайнер | 7h | 61 | 61 |
| 48 | 7.15 | Еженедельное совещание 15 | 1h | 2022-06-08 09:00 | 2022-06-08 10:00 |  | 2022-06-08 09:00 | 2022-06-08 10:00 | 1h | 55.39d |  | start no earlier than 2022-06-08 09:00 | 3D аниматор; Web-дизайнер; Ведущий программист; Мультимедиа-корреспондент; Системный аналитик; Технический писатель; Художник-дизайнер | 7h | 61 | 61 |
| 49 | 7.16 | Еженедельное совещание 16 | 1h | 2022-06-15 09:00 | 2022-06-15 10:00 |  | 2022-06-15 09:00 | 2022-06-15 10:00 | 1h | 51.39d |  | start no earlier than 2022-06-15 09:00 | 3D аниматор; Web-дизайнер; Ведущий программист; Мультимедиа-корреспондент; Системный аналитик; Технический писатель; Художник-дизайнер | 7h | 61 | 61 |
| 50 | 7.17 | Еженедельное совещание 17 | 1h | 2022-06-22 09:00 | 2022-06-22 10:00 |  | 2022-06-22 09:00 | 2022-06-22 10:00 | 1h | 46.39d |  | start no earlier than 2022-06-22 09:00 | 3D аниматор; Web-дизайнер; Ведущий программист; Мультимедиа-корреспондент; Системный аналитик; Технический писатель; Художник-дизайнер | 7h | 61 | 61 |
| 51 | 7.18 | Еженедельное совещание 18 | 1h | 2022-06-29 09:00 | 2022-06-29 10:00 |  | 2022-06-29 09:00 | 2022-06-29 10:00 | 1h | 41.39d |  | start no earlier than 2022-06-29 09:00 | 3D аниматор; Web-дизайнер; Ведущий программист; Мультимедиа-корреспондент; Системный аналитик; Технический писатель; Художник-дизайнер | 7h | 61 | 61 |
| 52 | 7.19 | Еженедельное совещание 19 | 1h | 2022-07-06 09:00 | 2022-07-06 10:00 |  | 2022-07-06 09:00 | 2022-07-06 10:00 | 1h | 36.39d |  | start no earlier than 2022-07-06 09:00 | 3D аниматор; Web-дизайнер; Ведущий программист; Мультимедиа-корреспондент; Системный аналитик; Технический писатель; Художник-дизайнер | 7h | 61 | 61 |
| 53 | 7.20 | Еженедельное совещание 20 | 1h | 2022-07-13 09:00 | 2022-07-13 10:00 |  | 2022-07-13 09:00 | 2022-07-13 10:00 | 1h | 31.39d |  | start no earlier than 2022-07-13 09:00 | 3D аниматор; Web-дизайнер; Ведущий программист; Мультимедиа-корреспондент; Системный аналитик; Технический писатель; Художник-дизайнер | 7h | 61 | 61 |
| 54 | 7.21 | Еженедельное совещание 21 | 1h | 2022-07-20 09:00 | 2022-07-20 10:00 |  | 2022-07-20 09:00 | 2022-07-20 10:00 | 1h | 26.39d |  | start no earlier than 2022-07-20 09:00 | 3D аниматор; Web-дизайнер; Ведущий программист; Мультимедиа-корреспондент; Системный аналитик; Технический писатель; Художник-дизайнер | 7h | 61 | 61 |
| 55 | 7.22 | Еженедельное совещание 22 | 1h | 2022-07-27 09:00 | 2022-07-27 10:00 |  | 2022-07-27 09:00 | 2022-07-27 10:00 | 1h | 21.39d |  | start no earlier than 2022-07-27 09:00 | 3D аниматор; Web-дизайнер; Ведущий программист; Мультимедиа-корреспондент; Системный аналитик; Технический писатель; Художник-дизайнер | 7h | 61 | 61 |
| 56 | 7.23 | Еженедельное совещание 23 | 1h | 2022-08-03 09:00 | 2022-08-03 10:00 |  | 2022-08-03 09:00 | 2022-08-03 10:00 | 1h | 16.39d |  | start no earlier than 2022-08-03 09:00 | 3D аниматор; Web-дизайнер; Ведущий программист; Мультимедиа-корреспондент; Системный аналитик; Технический писатель; Художник-дизайнер | 7h | 61 | 61 |
| 57 | 7.24 | Еженедельное совещание 24 | 1h | 2022-08-10 09:00 | 2022-08-10 10:00 |  | 2022-08-10 09:00 | 2022-08-10 10:00 | 1h | 11.39d |  | start no earlier than 2022-08-10 09:00 | 3D аниматор; Web-дизайнер; Ведущий программист; Мультимедиа-корреспондент; Системный аналитик; Технический писатель; Художник-дизайнер | 7h | 61 | 61 |
