# rk_1

Schedule from MS Project, 2022-04-04 to 2022-07-22, costs in р..
BMSTU

## Calendars

- Standard: Mon-Fri 08:00-12:00, 13:00-17:00; Sat-Sun off. Exceptions (off unless hours are given): 2022-05-02 to 2022-05-03 (День труда), 2022-05-09 to 2022-05-10 (День победы), 2022-06-13 (День России).

## Resources

| Resource | Unit | Rate | Cost per use |
| --- | --- | --- | --- |
| Аналитик |  | 500 | 5000 |
| Ведущий программист |  | 437.5 | 3000 |
| Программист 1 |  | 312.5 | 2000 |
| Программист 2 |  | 312.5 | 2000 |
| Программист 3 |  | 312.5 | 2000 |
| Технический писатель |  | 250 | 1500 |
| Наборщик данных |  | 218.75 | 1000 |
| Сервер базы данных |  | 25000 | 10000 |
| Картриджи для принтера | шт | 2500 |  |
| Бумага | пач | 200 |  |
| Специалист по профилактике |  |  | 3000 |

## Schedule

| ID | WBS | Task | Type | Duration | Start | Finish | Predecessors | Baseline start | Baseline finish | Baseline duration | Total slack | Free slack | Constraint | Resources | Work | Cost | Baseline cost |
| --- | --- | --- | --- | --- | --- | --- | --- | --- | --- | --- | --- | --- | --- | --- | --- | --- | --- |
| 1 | 1 | Начало реализации проекта | milestone | 0d | 2022-04-04 09:00 | 2022-04-04 09:00 |  | 2022-04-04 09:00 | 2022-04-04 09:00 | 0d | 0d |  |  |  |  |  |  |
| 2 | 2 | **Программирование** |  | 35.71d | 2022-04-05 09:00 | 2022-06-01 10:42 |  | 2022-04-05 09:00 | 2022-06-01 10:42 | 35.71d | 0d |  |  | Сервер базы данных | 936h | 390,857.13 | 390,857.13 |
| 3 | 2.1 | Поставновка задачи |  | 5d | 2022-04-05 09:00 | 2022-04-12 09:00 | 1FS+1d | 2022-04-05 09:00 | 2022-04-12 09:00 | 5d | 0d |  |  | Аналитик; Ведущий программист | 80h | 45,500 | 45,500 |
| 4 | 2.2 | Разработка интерфейса |  | 14.29d | 2022-04-12 09:00 | 2022-05-17 14:42 | 3 | 2022-04-12 09:00 | 2022-05-17 14:42 | 14.29d | 0d |  |  | Ведущий программист; Программист 1; Программист 2; Программист 3 | 160h | 61,857.14 | 61,857.14 |
| 5 | 2.3 | Разработка модулей обработки данных |  | 10d | 2022-05-17 14:42 | 2022-06-01 10:42 | 4 | 2022-05-17 14:42 | 2022-06-01 10:42 | 10d | 0d |  |  | Программист 2; Программист 3; Программист 1 | 240h | 80,999.99 | 80,999.99 |
| 6 | 2.4 | Разработка базы данных |  | 15d | 2022-04-12 09:00 | 2022-05-05 12:00 | 3 | 2022-04-12 09:00 | 2022-05-05 12:00 | 15d | 3.71d | 0d |  | Аналитик; Программист 1; Программист 2 | 360h | 143,999.99 | 143,999.99 |
| 7 | 2.5 | Заполнение базы данных |  | 12d | 2022-05-05 13:00 | 2022-05-26 10:00 | 6 | 2022-05-05 13:00 | 2022-05-26 10:00 | 12d | 3.71d |  |  | Наборщик данных | 96h | 22,000 | 22,000 |
| 8 | 3 | Программирование завершено | milestone | 0d | 2022-06-01 10:42 | 2022-06-01 10:42 | 7, 5 | 2022-06-01 10:42 | 2022-06-01 10:42 | 0d | 0d |  |  |  |  |  |  |
| 9 | 4 | **Тестирование и отладка** |  | 20d | 2022-06-01 10:42 | 2022-07-01 15:42 |  | 2022-06-01 10:42 | 2022-07-01 15:42 | 20d | 15d |  |  |  | 320h | 124,999.99 | 124,999.99 |
| 10 | 4.1 | Подготовка тестовых наборов данных |  | 5d | 2022-06-01 10:42 | 2022-06-08 14:42 | 8FS-5d | 2022-06-01 10:42 | 2022-06-08 14:42 | 5d | 15d | 0d |  | Программист 1; Программист 3 | 80h | 29,000 | 29,000 |
| 11 | 4.2 | Тестирование и исправление ошибок |  | 15d | 2022-06-08 14:42 | 2022-07-01 15:42 | 10 | 2022-06-08 14:42 | 2022-07-01 15:42 | 15d | 15d | 0d |  | Ведущий программист; Программист 2 | 240h | 95,000 | 95,000 |
| 12 | 5 | Отладка завершена | milestone | 0d | 2022-07-01 15:42 | 2022-07-01 15:42 | 11 | 2022-07-01 15:42 | 2022-07-01 15:42 | 0d | 15d | 20.38d |  |  |  |  |  |
| 13 | 6 | **Разработка документации** |  | 25d | 2022-06-17 08:42 | 2022-07-22 15:42 |  | 2022-06-17 08:42 | 2022-07-22 15:42 | 25d | 0d |  |  | Бумага [0.01 пач]; Картриджи для принтера [0.01 шт] | 200h | 59,500 | 59,500 |
| 14 | 6.1 | Составление программной документации |  | 10d | 2022-06-17 08:42 | 2022-07-01 15:42 | 8SS+10d | 2022-06-17 08:42 | 2022-07-01 15:42 | 10d | 0d |  |  | Технический писатель | 80h | 21,500 | 21,500 |
| 15 | 6.2 | Составление пользовательской документации |  | 15d | 2022-07-01 15:42 | 2022-07-22 15:42 | 14 | 2022-07-01 15:42 | 2022-07-22 15:42 | 15d | 0d |  |  | Технический писатель | 120h | 31,500 | 31,500 |
| 16 | 7 | Конец проекта | milestone | 0d | 2022-07-22 15:42 | 2022-07-22 15:42 | 15 | 2022-07-22 15:42 | 2022-07-22 15:42 | 0d | 0d |  |  |  |  |  |  |
| 17 | 8 | **Профилактика оборудования** |  | 52.5d | 2022-04-26 12:00 | 2022-07-19 12:00 |  | 2022-04-26 12:00 | 2022-07-19 12:00 | 52.5d | 0d |  |  |  | 21h | 21,000 | 21,000 |
| 18 | 8.1 | Профилактика оборудования 1 |  | 3h | 2022-04-26 12:00 | 2022-04-26 16:00 |  | 2022-04-26 12:00 | 2022-04-26 16:00 | 3h | 55.46d | 52.12d | start no earlier than 2022-04-26 09:00 | Специалист по профилактике | 3h | 3,000 | 3,000 |
| 19 | 8.2 | Профилактика оборудования 2 |  | 3h | 2022-05-11 08:00 | 2022-05-11 11:00 |  | 2022-05-11 08:00 | 2022-05-11 11:00 | 3h | 48.84d | 45.5d | start no earlier than 2022-05-10 09:00 | Специалист по профилактике | 3h | 3,000 | 3,000 |
| 20 | 8.3 | Профилактика оборудования 3 |  | 3h | 2022-05-24 12:00 | 2022-05-24 16:00 |  | 2022-05-24 12:00 | 2022-05-24 16:00 | 3h | 40.21d | 36.88d | start no earlier than 2022-05-24 09:00 | Специалист по профилактике | 3h | 3,000 | 3,000 |
| 21 | 8.4 | Профилактика оборудования 4 |  | 3h | 2022-06-07 12:00 | 2022-06-07 16:00 |  | 2022-06-07 12:00 | 2022-06-07 16:00 | 3h | 30.96d | 27.62d | start no earlier than 2022-06-07 09:00 | Специалист по профилактике | 3h | 3,000 | 3,000 |
| 22 | 8.5 | Профилактика оборудования 5 |  | 3h | 2022-06-21 12:00 | 2022-06-21 16:00 |  | 2022-06-21 12:00 | 2022-06-21 16:00 | 3h | 22.71d | 19.38d | start no earlier than 2022-06-21 09:00 | Специалист по профилактике | 3h | 3,000 | 3,000 |
| 23 | 8.6 | Профилактика оборудования 6 |  | 3h | 2022-07-05 09:00 | 2022-07-05 12:00 |  | 2022-07-05 09:00 | 2022-07-05 12:00 | 3h | 13.34d | 10d | start no earlier than 2022-07-05 09:00 | Специалист по профилактике | 3h | 3,000 | 3,000 |
| 24 | 8.7 | Профилактика оборудования 7 |  | 3h | 2022-07-19 09:00 | 2022-07-19 12:00 |  | 2022-07-19 09:00 | 2022-07-19 12:00 | 3h | 3.34d | 0d | start no earlier than 2022-07-19 09:00 | Специалист по профилактике | 3h | 3,000 | 3,000 |
