# RK

Schedule from MS Project, 2022-03-01 to 2022-08-24, status date 2022-04-30, costs in p., A marks actual dates.
Команда разработчиков из 16 человек / длительности : 6 месяцев / Бюджет проекта: 50 000 рублей

## Calendars

- Standard: Mon-Fri 08:00-12:00, 13:00-17:00; Sat-Sun off. Exceptions (off unless hours are given): 2022-03-05 to 2022-03-08 (Международный женский день), 2022-04-30 to 2022-05-02 (Праздник Весны и Труда), 2022-05-07 to 2022-05-10 (День Победы), 2022-06-11 to 2022-06-13 (День России).

## Resources

| Resource | Group | Rate | Cost per use |
| --- | --- | --- | --- |
| Ведущий программист | Программирование | 10 | 100 |
| Программист#1 | Программирование | 7 | 50 |
| Программист#2 | Программирование | 7 | 50 |
| Программист#3 | Программирование | 7 | 50 |
| Программист#4 | Программирование | 7 | 50 |
| Системный аналитик | Анализ | 20 | 300 |
| Художник-дизайнер | Дизайн | 8 | 70 |
| Технический писатель | Документация | 5 | 20 |
| Web-дизайнер | Internet | 7 | 50 |
| 3D аниматор | Дизайн | 8 | 70 |
| Мультимедиа-корреспондент | М-Медиа | 3 | 20 |
| Наборщик данных#1 | Ввод данных | 2 | 10 |
| Наборщик данных#2 | Ввод данных | 2 | 10 |
| Наборщик данных#3 | Ввод данных | 2 | 10 |
| Наборщик данных#4 | Ввод данных | 2 | 10 |
| Наборщик данных#5 | Ввод данных | 2 | 10 |
| Дополнительный сервер | Оборудование | 2 |  |
| Server |  |  | 4000 |

## Schedule

| ID | WBS | Task | Type | Duration | Start | Finish | Predecessors | Complete | Remaining | Baseline start | Baseline finish | Baseline duration | Total slack | Free slack | Constraint | Resources | Work | Actual work | Cost | Baseline cost | Actual cost |
| --- | --- | --- | --- | --- | --- | --- | --- | --- | --- | --- | --- | --- | --- | --- | --- | --- | --- | --- | --- | --- | --- |
| 1 | 1 | Начало проекта | milestone | 0w | 2022-03-01 09:00 A | 2022-03-01 09:00 A |  | 100% |  | 2022-03-01 09:00 | 2022-03-01 09:00 | 0w |  |  |  |  |  |  |  |  |  |
| 2 | 2 | **Разработка дизайна интерфейса** |  | 97.8d | 2022-03-01 09:00 A | 2022-07-22 16:23 | 1 | 83% | 16.72d | 2022-03-01 09:00 | 2022-06-30 08:42 | 80.96d | 0d |  |  |  | 560h | 320h | 5,600 | 5,650 | 3,600 |
| 3 | 2.1 | **Создание интерфейса** |  | 25.75d | 2022-03-01 09:00 A | 2022-04-07 16:00 A |  | 100% |  | 2022-03-01 09:00 | 2022-04-07 16:00 | 25.75d |  |  |  |  | 320h | 320h | 2,770 | 2,770 | 2,770 |
| 4 | 2.1.1 | Разработка 2D графических элементов |  | 3w | 2022-03-01 09:00 A | 2022-03-24 14:45 A |  | 100% |  | 2022-03-01 09:00 | 2022-03-24 14:45 | 3w |  |  |  | Художник-дизайнер | 120h | 120h | 1,030 | 1,030 | 1,030 |
| 5 | 2.1.2 | Разработка 3D графических элементов |  | 3.7w | 2022-03-01 09:00 A | 2022-03-29 17:00 A | 4SS | 100% |  | 2022-03-01 09:00 | 2022-03-17 12:00 | 2w |  |  |  | 3D аниматор | 80h | 80h | 710 | 710 | 710 |
| 6 | 2.1.3 | Создание заставки |  | 3w | 2022-03-17 13:00 A | 2022-04-07 16:00 A | 5 | 100% |  | 2022-03-17 13:00 | 2022-04-07 16:00 | 3w |  |  |  | 3D аниматор | 120h | 120h | 1,030 | 1,030 | 1,030 |
| 7 | 2.2 | Программирование интерфейса |  | 2w | 2022-07-11 17:23 | 2022-07-22 16:23 | 3, 12 |  |  | 2022-06-20 13:42 | 2022-06-30 08:42 | 1.5w | 0d |  | start no earlier than 2022-06-06 09:00 | Программист#3; Программист#4; Программист#1; Программист#2 | 240h |  | 1,830 | 1,880 |  |
| 8 | 3 | **Построение базы объектов** |  | 86.31d | 2022-03-24 14:36 A | 2022-07-29 08:05 |  | 29% | 61.07d | 2022-03-24 14:36 | 2022-07-29 09:05 | 86.44d | 18.41d |  |  | Дополнительный сервер; Server | 2891.4h | 489.2h | 13,872.8 | 15,615 | 4,297.42 |
| 9 | 3.1 | Анализ и построение структуры базы объектов |  | 2w | 2022-03-24 14:36 A | 2022-04-07 17:00 A |  | 100% |  | 2022-03-24 14:36 | 2022-04-07 17:00 | 2w |  |  |  | Системный аналитик | 80h | 80h | 1,900 | 1,900 | 1,900 |
| 10 | 3.2 | Программирование средств обработки базы объектов |  | 3w | 2022-04-11 09:05 A | 2022-05-03 08:05 | 9 | 99% | 0.03w | 2022-04-11 09:05 | 2022-05-03 09:05 | 3w | 18.41d | 0d |  | Программист#3; Программист#4 | 240h | 237.8h | 1,780 | 1,780 | 1,764.62 |
| 11 | 3.3 | Наполнение базы объектов |  | 12w | 2022-05-03 08:05 | 2022-07-29 08:05 | 10 |  |  | 2022-05-03 09:05 | 2022-07-29 09:05 | 12w | 18.41d |  |  | Наборщик данных#1; Наборщик данных#2; Наборщик данных#3; Наборщик данных#4; Наборщик данных#5 | 2400h |  | 4,850 | 4,850 |  |
| 12 | 4 | **Создание ядра GIS** |  | 88.88d | 2022-03-01 09:00 A | 2022-07-11 17:23 |  | 50% | 44.46d | 2022-03-01 09:00 | 2022-06-20 13:42 | 73.46d | 0d |  |  |  | 1880h | 908.8h | 18,277.45 | 18,212.08 | 10,396.63 |
| 13 | 4.1 | Анализ и проектирование ядра |  | 3.01w | 2022-03-01 09:00 A | 2022-03-24 15:00 A |  | 100% |  | 2022-03-01 09:00 | 2022-03-24 15:00 | 3.01w |  |  |  | Системный аналитик; Ведущий программист | 240h | 240h | 4,000 | 4,000 | 4,000 |
| 14 | 4.2 | Создание модели ядра |  | 2.03w | 2022-03-24 15:00 A | 2022-04-07 16:05 A | 13 | 100% |  | 2022-03-24 15:00 | 2022-04-07 16:05 | 2.03w |  |  |  | Ведущий программист; Программист#1; Программист#2; Программист#3; Программист#4 | 400h | 400h | 3,335.3 | 3,335.3 | 3,335.3 |
| 15 | 4.3 | Тестирование модели ядра |  | 0.25w | 2022-04-07 16:05 A | 2022-04-11 09:05 A | 14 | 100% |  | 2022-04-07 16:05 | 2022-04-11 09:05 | 0.25w |  |  |  | Программист#1; Программист#3; Программист#2; Программист#4 | 40h | 40h | 480 | 480 | 480 |
| 16 | 4.4 | Создание рабочей версии ядра |  | 11.24w | 2022-04-11 09:05 A | 2022-07-11 17:23 | 15 | 26% | 8.27w | 2022-04-11 09:05 | 2022-06-20 13:42 | 9.29w | 0d |  |  | Ведущий программист; Программист#1; Программист#2; Программист#3; Программист#4 | 1200h | 228.8h | 9,462.15 | 9,396.78 | 2,081.33 |
| 17 | 5 | Создание мультимедиа – наполнения |  | 6w | 2022-04-07 16:00 A | 2022-05-25 15:43 | 3 | 52% | 2.86w | 2022-04-07 16:00 | 2022-05-25 15:43 | 6w | 63.58d |  |  | Мультимедиа-корреспондент | 240h | 125.71h | 882.8 | 740 | 471.37 |
| 18 | 6 | Создание справочной системы |  | 2w | 2022-08-04 08:00 | 2022-08-24 11:23 | 7 |  |  | 2022-07-13 08:00 | 2022-08-01 16:04 | 2w | 0d |  |  | Технический писатель | 80h |  | 420 | 420 |  |
| 19 | 7 | **Создание руководства пользователя** |  | 20.44d | 2022-07-08 16:23 | 2022-08-08 10:53 | 7FS-10d |  |  | 2022-06-16 08:42 | 2022-07-14 10:12 | 20.19d | 1.67d |  |  |  | 160h |  | 1,010 | 1,010 |  |
| 20 | 7.1 | Разработка дизайна руководства |  | 1w | 2022-07-08 16:23 | 2022-07-18 14:43 |  |  |  | 2022-06-16 08:42 | 2022-06-23 15:02 | 1w | 1.67d | 0d |  | Художник-дизайнер | 40h |  | 390 | 390 |  |
| 21 | 7.2 | Написание руководства пользователя |  | 3w | 2022-07-12 16:23 | 2022-08-08 10:53 | 20SS+2d |  |  | 2022-06-20 08:42 | 2022-07-14 10:12 | 3w | 1.67d | 0d |  | Технический писатель | 120h |  | 620 | 620 |  |
| 22 | 8 | **Создание web–сайта и поддержка** |  | 28.83d | 2022-07-12 16:23 | 2022-08-22 15:00 |  |  |  | 2022-06-20 08:42 | 2022-07-28 10:20 | 28.2d | 1.67d |  |  |  | 248h |  | 2,106 | 2,106 |  |
| 23 | 8.1 | Разработка структуры сайта |  | 1d | 2022-07-12 16:23 | 2022-07-14 08:23 | 21SS |  |  | 2022-06-20 08:42 | 2022-06-21 08:42 | 1d | 1.67d | 0d |  | Web-дизайнер | 8h |  | 106 | 106 |  |
| 24 | 8.2 | Разработка дизайна сайта |  | 1.47w | 2022-07-14 08:23 | 2022-07-26 16:26 | 23 |  |  | 2022-06-21 08:42 | 2022-07-01 15:45 | 1.47w | 1.67d | 0d |  | Web-дизайнер; Художник-дизайнер; 3D аниматор | 120h |  | 1,110 | 1,110 |  |
| 25 | 8.3 | Наполнение сайта |  | 3w | 2022-07-26 16:26 | 2022-08-22 15:00 | 24 |  |  | 2022-07-01 15:45 | 2022-07-28 10:20 | 3w | 1.67d |  |  | Web-дизайнер | 120h |  | 890 | 890 |  |
| 26 | 9 | Тестирование сайта |  | 5.59w | 2022-03-17 16:37 A | 2022-05-23 10:50 | 22FS-1w | 39% | 3.38w | 2022-07-21 10:20 | 2022-08-10 14:36 | 2.82w | 66.07d | 0d | start no earlier than 2022-03-17 16:37 | Ведущий программист; Программист#1; Программист#2; Программист#3; Программист#4 | 480h | 88.28h | 3,924.84 | 3,924.84 | 667.93 |
| 27 | 10 | Сдача сайта в эксплуатацию | milestone | 0w | 2022-05-23 10:50 | 2022-05-23 10:50 | 26 |  |  | 2022-08-10 14:36 | 2022-08-10 14:36 | 0w | 66.07d |  |  |  |  |  |  |  |  |

| ID | WBS | Task | Duration | Start | Finish | Complete | Remaining | Baseline start | Baseline finish | Baseline duration | Total slack | Constraint | Resources | Work | Actual work | Cost | Baseline cost | Actual cost |
| --- | --- | --- | --- | --- | --- | --- | --- | --- | --- | --- | --- | --- | --- | --- | --- | --- | --- | --- |
| 28 | 11 | **Еженедельное совещание** | 109.12d | 2022-03-02 09:00 A | 2022-08-10 10:00 | 38% | 68.2d | 2022-03-02 09:00 | 2022-08-10 10:00 | 109.12d | 10.17d |  |  | 168h | 63h | 1,464 | 1,464 | 549 |
| 29 | 11.1 | Еженедельное совещание 1 | 1h | 2022-03-02 09:00 A | 2022-03-02 10:00 A | 100% |  | 2022-03-02 09:00 | 2022-03-02 10:00 | 1h |  | start no earlier than 2022-03-02 09:00 | 3D аниматор; Web-дизайнер; Ведущий программист; Мультимедиа-корреспондент; Системный аналитик; Технический писатель; Художник-дизайнер | 7h | 7h | 61 | 61 | 61 |
| 30 | 11.2 | Еженедельное совещание 2 | 1h | 2022-03-09 09:00 A | 2022-03-09 10:00 A | 100% |  | 2022-03-09 09:00 | 2022-03-09 10:00 | 1h |  | start no earlier than 2022-03-09 09:00 | 3D аниматор; Web-дизайнер; Ведущий программист; Мультимедиа-корреспондент; Системный аналитик; Технический писатель; Художник-дизайнер | 7h | 7h | 61 | 61 | 61 |
| 31 | 11.3 | Еженедельное совещание 3 | 1h | 2022-03-16 09:00 A | 2022-03-16 10:00 A | 100% |  | 2022-03-16 09:00 | 2022-03-16 10:00 | 1h |  | start no earlier than 2022-03-16 09:00 | 3D аниматор; Web-дизайнер; Ведущий программист; Мультимедиа-корреспондент; Системный аналитик; Технический писатель; Художник-дизайнер | 7h | 7h | 61 | 61 | 61 |
| 32 | 11.4 | Еженедельное совещание 4 | 1h | 2022-03-23 09:00 A | 2022-03-23 10:00 A | 100% |  | 2022-03-23 09:00 | 2022-03-23 10:00 | 1h |  | start no earlier than 2022-03-23 09:00 | 3D аниматор; Web-дизайнер; Ведущий программист; Мультимедиа-корреспондент; Системный аналитик; Технический писатель; Художник-дизайнер | 7h | 7h | 61 | 61 | 61 |
| 33 | 11.5 | Еженедельное совещание 5 | 1h | 2022-03-30 09:00 A | 2022-03-30 10:00 A | 100% |  | 2022-03-30 09:00 | 2022-03-30 10:00 | 1h |  | start no earlier than 2022-03-30 09:00 | 3D аниматор; Web-дизайнер; Ведущий программист; Мультимедиа-корреспондент; Системный аналитик; Технический писатель; Художник-дизайнер | 7h | 7h | 61 | 61 | 61 |
| 34 | 11.6 | Еженедельное совещание 6 | 1h | 2022-04-06 09:00 A | 2022-04-06 10:00 A | 100% |  | 2022-04-06 09:00 | 2022-04-06 10:00 | 1h |  | start no earlier than 2022-04-06 09:00 | 3D аниматор; Web-дизайнер; Ведущий программист; Мультимедиа-корреспондент; Системный аналитик; Технический писатель; Художник-дизайнер | 7h | 7h | 61 | 61 | 61 |
| 35 | 11.7 | Еженедельное совещание 7 | 1h | 2022-04-13 09:00 A | 2022-04-13 10:00 A | 100% |  | 2022-04-13 09:00 | 2022-04-13 10:00 | 1h |  | start no earlier than 2022-04-13 09:00 | 3D аниматор; Web-дизайнер; Ведущий программист; Мультимедиа-корреспондент; Системный аналитик; Технический писатель; Художник-дизайнер | 7h | 7h | 61 | 61 | 61 |
| 36 | 11.8 | Еженедельное совещание 8 | 1h | 2022-04-20 09:00 A | 2022-04-20 10:00 A | 100% |  | 2022-04-20 09:00 | 2022-04-20 10:00 | 1h |  | start no earlier than 2022-04-20 09:00 | 3D аниматор; Web-дизайнер; Ведущий программист; Мультимедиа-корреспондент; Системный аналитик; Технический писатель; Художник-дизайнер | 7h | 7h | 61 | 61 | 61 |
| 37 | 11.9 | Еженедельное совещание 9 | 1h | 2022-04-27 09:00 A | 2022-04-27 10:00 A | 100% |  | 2022-04-27 09:00 | 2022-04-27 10:00 | 1h |  | start no earlier than 2022-04-27 09:00 | 3D аниматор; Web-дизайнер; Ведущий программист; Мультимедиа-корреспондент; Системный аналитик; Технический писатель; Художник-дизайнер | 7h | 7h | 61 | 61 | 61 |
| 38 | 11.10 | Еженедельное совещание 10 | 1h | 2022-05-04 09:00 | 2022-05-04 10:00 |  |  | 2022-05-04 09:00 | 2022-05-04 10:00 | 1h | 77.17d | start no earlier than 2022-05-04 09:00 | 3D аниматор; Web-дизайнер; Ведущий программист; Мультимедиа-корреспондент; Системный аналитик; Технический писатель; Художник-дизайнер | 7h |  | 61 | 61 |  |
| 39 | 11.11 | Еженедельное совещание 11 | 1h | 2022-05-11 09:00 | 2022-05-11 10:00 |  |  | 2022-05-11 09:00 | 2022-05-11 10:00 | 1h | 74.17d | start no earlier than 2022-05-11 09:00 | 3D аниматор; Web-дизайнер; Ведущий программист; Мультимедиа-корреспондент; Системный аналитик; Технический писатель; Художник-дизайнер | 7h |  | 61 | 61 |  |
| 40 | 11.12 | Еженедельное совещание 12 | 1h | 2022-05-18 09:00 | 2022-05-18 10:00 |  |  | 2022-05-18 09:00 | 2022-05-18 10:00 | 1h | 69.17d | start no earlier than 2022-05-18 09:00 | 3D аниматор; Web-дизайнер; Ведущий программист; Мультимедиа-корреспондент; Системный аналитик; Технический писатель; Художник-дизайнер | 7h |  | 61 | 61 |  |
| 41 | 11.13 | Еженедельное совещание 13 | 1h | 2022-05-25 09:00 | 2022-05-25 10:00 |  |  | 2022-05-25 09:00 | 2022-05-25 10:00 | 1h | 64.17d | start no earlier than 2022-05-25 09:00 | 3D аниматор; Web-дизайнер; Ведущий программист; Мультимедиа-корреспондент; Системный аналитик; Технический писатель; Художник-дизайнер | 7h |  | 61 | 61 |  |
| 42 | 11.14 | Еженедельное совещание 14 | 1h | 2022-06-01 09:00 | 2022-06-01 10:00 |  |  | 2022-06-01 09:00 | 2022-06-01 10:00 | 1h | 59.17d | start no earlier than 2022-06-01 09:00 | 3D аниматор; Web-дизайнер; Ведущий программист; Мультимедиа-корреспондент; Системный аналитик; Технический писатель; Художник-дизайнер | 7h |  | 61 | 61 |  |
| 43 | 11.15 | Еженедельное совещание 15 | 1h | 2022-06-08 09:00 | 2022-06-08 10:00 |  |  | 2022-06-08 09:00 | 2022-06-08 10:00 | 1h | 54.17d | start no earlier than 2022-06-08 09:00 | 3D аниматор; Web-дизайнер; Ведущий программист; Мультимедиа-корреспондент; Системный аналитик; Технический писатель; Художник-дизайнер | 7h |  | 61 | 61 |  |
| 44 | 11.16 | Еженедельное совещание 16 | 1h | 2022-06-15 09:00 | 2022-06-15 10:00 |  |  | 2022-06-15 09:00 | 2022-06-15 10:00 | 1h | 50.17d | start no earlier than 2022-06-15 09:00 | 3D аниматор; Web-дизайнер; Ведущий программист; Мультимедиа-корреспондент; Системный аналитик; Технический писатель; Художник-дизайнер | 7h |  | 61 | 61 |  |
| 45 | 11.17 | Еженедельное совещание 17 | 1h | 2022-06-22 09:00 | 2022-06-22 10:00 |  |  | 2022-06-22 09:00 | 2022-06-22 10:00 | 1h | 45.17d | start no earlier than 2022-06-22 09:00 | 3D аниматор; Web-дизайнер; Ведущий программист; Мультимедиа-корреспондент; Системный аналитик; Технический писатель; Художник-дизайнер | 7h |  | 61 | 61 |  |
| 46 | 11.18 | Еженедельное совещание 18 | 1h | 2022-06-29 09:00 | 2022-06-29 10:00 |  |  | 2022-06-29 09:00 | 2022-06-29 10:00 | 1h | 40.17d | start no earlier than 2022-06-29 09:00 | 3D аниматор; Web-дизайнер; Ведущий программист; Мультимедиа-корреспондент; Системный аналитик; Технический писатель; Художник-дизайнер | 7h |  | 61 | 61 |  |
| 47 | 11.19 | Еженедельное совещание 19 | 1h | 2022-07-06 09:00 | 2022-07-06 10:00 |  |  | 2022-07-06 09:00 | 2022-07-06 10:00 | 1h | 35.17d | start no earlier than 2022-07-06 09:00 | 3D аниматор; Web-дизайнер; Ведущий программист; Мультимедиа-корреспондент; Системный аналитик; Технический писатель; Художник-дизайнер | 7h |  | 61 | 61 |  |
| 48 | 11.20 | Еженедельное совещание 20 | 1h | 2022-07-13 09:00 | 2022-07-13 10:00 |  |  | 2022-07-13 09:00 | 2022-07-13 10:00 | 1h | 30.17d | start no earlier than 2022-07-13 09:00 | 3D аниматор; Web-дизайнер; Ведущий программист; Мультимедиа-корреспондент; Системный аналитик; Технический писатель; Художник-дизайнер | 7h |  | 61 | 61 |  |
| 49 | 11.21 | Еженедельное совещание 21 | 1h | 2022-07-20 09:00 | 2022-07-20 10:00 |  |  | 2022-07-20 09:00 | 2022-07-20 10:00 | 1h | 25.17d | start no earlier than 2022-07-20 09:00 | 3D аниматор; Web-дизайнер; Ведущий программист; Мультимедиа-корреспондент; Системный аналитик; Технический писатель; Художник-дизайнер | 7h |  | 61 | 61 |  |
| 50 | 11.22 | Еженедельное совещание 22 | 1h | 2022-07-27 09:00 | 2022-07-27 10:00 |  |  | 2022-07-27 09:00 | 2022-07-27 10:00 | 1h | 20.17d | start no earlier than 2022-07-27 09:00 | 3D аниматор; Web-дизайнер; Ведущий программист; Мультимедиа-корреспондент; Системный аналитик; Технический писатель; Художник-дизайнер | 7h |  | 61 | 61 |  |
| 51 | 11.23 | Еженедельное совещание 23 | 1h | 2022-08-03 09:00 | 2022-08-03 10:00 |  |  | 2022-08-03 09:00 | 2022-08-03 10:00 | 1h | 15.17d | start no earlier than 2022-08-03 09:00 | 3D аниматор; Web-дизайнер; Ведущий программист; Мультимедиа-корреспондент; Системный аналитик; Технический писатель; Художник-дизайнер | 7h |  | 61 | 61 |  |
| 52 | 11.24 | Еженедельное совещание 24 | 1h | 2022-08-10 09:00 | 2022-08-10 10:00 |  |  | 2022-08-10 09:00 | 2022-08-10 10:00 | 1h | 10.17d | start no earlier than 2022-08-10 09:00 | 3D аниматор; Web-дизайнер; Ведущий программист; Мультимедиа-корреспондент; Системный аналитик; Технический писатель; Художник-дизайнер | 7h |  | 61 | 61 |  |
