# rk-variant2-10

Schedule from MS Project, 2022-04-04 to 2022-08-03, status date 2022-06-06, costs in ₽, A marks actual dates.

## Calendars

- Standard: Mon-Fri 09:00-13:00, 14:00-18:00; Sat-Sun off. Exceptions (off unless hours are given): 2022-04-30 to 2022-05-02 (Праздник Весны и Труда), 2022-05-07 to 2022-05-10 (День Победы), 2022-06-11 to 2022-06-13 (День России).

## Resources

| Resource | Group | Unit | Rate | Cost per use |
| --- | --- | --- | --- | --- |
| Аналитик |  |  | 500 | 5 |
| Ведущий программист | Программисты |  | 437.5 | 3000 |
| Программист 1 | Программисты |  | 312.5 | 2000 |
| Программист 2 | Программисты |  | 312.5 | 2000 |
| Программист 3 | Программисты |  | 312.5 | 2000 |
| Технический писатель |  |  | 250 | 1500 |
| Наборщик данных | Технический персонал |  | 218.75 | 1000 |
| Сервер базы данных | Оборудование |  | 25000 | 10000 |
| Картриджи для принтера | Расходные материалы | шт | 2500 |  |
| Бумага | Расходные материалы | пач | 200 |  |
| Специалист |  |  |  | 3000 |

## Schedule

| ID | WBS | Task | Type | Duration | Start | Finish | Predecessors | Complete | Remaining | Baseline start | Baseline finish | Baseline duration | Total slack | Free slack | Constraint | Resources | Work | Actual work | Cost | Baseline cost | Actual cost |
| --- | --- | --- | --- | --- | --- | --- | --- | --- | --- | --- | --- | --- | --- | --- | --- | --- | --- | --- | --- | --- | --- |
| 1 | 1 | Начало проекта | milestone | 0d | 2022-04-04 09:00 A | 2022-04-04 09:00 A |  | 100% |  | 2022-04-04 09:00 | 2022-04-04 09:00 | 0d |  |  |  |  |  |  |  |  |  |
| 2 | 2 | **Программирование** |  | 45.11d | 2022-04-05 09:00 A | 2022-06-14 10:51 |  | 94% | 2.86d | 2022-04-05 09:00 | 2022-05-31 12:08 | 36.64d | 0d |  |  | Сервер базы данных | 936h | 905.14h | 389,190.37 | 375,974.29 | 378,490.79 |
| 3 | 2.1 | Постановка задачи |  | 5d | 2022-04-05 09:00 A | 2022-04-11 18:00 A | 1FS+1d | 100% |  | 2022-04-05 09:00 | 2022-04-11 18:00 | 5d |  |  |  | Аналитик; Ведущий программист | 80h | 80h | 40,505 | 40,505 | 40,505 |
| 4 | 2.2 | Разработка интерфейса |  | 10d | 2022-04-12 09:00 A | 2022-04-25 18:00 A | 3 | 100% |  | 2022-04-12 09:00 | 2022-04-25 18:00 | 10d |  |  |  | Ведущий программист; Программист 1 | 160h | 160h | 65,000 | 65,000 | 65,000 |
| 5 | 2.3 | Разработка модулей обработки данных |  | 20.11d | 2022-05-04 12:00 A | 2022-06-14 10:51 | 4 | 81% | 3.86d | 2022-05-04 12:00 | 2022-05-30 16:34 | 16.07d | 0d |  |  | Программист 2; Программист 3; Программист 1 | 240h | 209.14h | 89,100 | 79,000 | 78,490.42 |
| 6 | 2.4 | Разработка базы данных |  | 19.64d | 2022-04-12 09:00 A | 2022-05-13 09:08 A | 3 | 100% |  | 2022-04-12 09:00 | 2022-05-13 09:08 | 19.64d |  |  |  | Аналитик; Программист 1; Программист 2; Программист 3 | 360h | 360h | 135,085.37 | 132,969.29 | 135,085.37 |
| 7 | 2.5 | Заполнение базы данных |  | 6d | 2022-05-13 09:08 A | 2022-05-23 09:08 A | 6 | 100% |  | 2022-05-13 09:08 | 2022-05-31 12:08 | 12d |  |  |  | Наборщик данных [200%] | 96h | 96h | 23,000 | 22,000 | 23,000 |
| 8 | 3 | Программирование завершено | milestone | 0d | 2022-06-14 10:51 | 2022-06-14 10:51 | 5, 7 |  |  | 2022-05-31 12:08 | 2022-05-31 12:08 | 0d | 0d |  |  |  |  |  |  |  |  |
| 9 | 4 | **Тестирование и отладка** |  | 24.18d | 2022-05-23 12:34 A | 2022-06-28 16:00 |  | 44% | 13.56d | 2022-05-24 12:08 | 2022-06-29 14:34 | 24.43d | 24.86d |  |  |  | 320h | 112h | 131,850 | 125,000 | 50,040 |
| 10 | 4.1 | Подготовка тестовых наборов данных |  | 8.18d | 2022-05-23 12:34 A | 2022-06-02 18:00 A | 8FS-5d | 100% |  | 2022-05-24 12:08 | 2022-06-06 16:34 | 9.43d |  |  |  | Программист 1; Программист 3 | 80h | 80h | 31,900 | 29,000 | 31,900 |
| 11 | 4.2 | Тестирование и исправление ошибок |  | 15d | 2022-06-03 09:00 A | 2022-06-28 16:00 | 10 | 13% | 13d | 2022-06-06 16:34 | 2022-06-29 14:34 | 15d | 24.86d | 0d |  | Ведущий программист; Программист 2 | 240h | 32h | 98,950 | 95,000 | 17,700 |
| 12 | 5 | Отладка завершена | milestone | 0d | 2022-06-28 16:00 | 2022-06-28 16:00 | 11 |  |  | 2022-06-29 14:34 | 2022-06-29 14:34 | 0d | 24.86d |  |  |  |  |  |  |  |  |
| 13 | 6 | **Разработка документации** |  | 25d | 2022-06-28 14:51 | 2022-08-03 15:51 |  |  |  | 2022-06-15 16:08 | 2022-07-21 17:08 | 25d | 0d |  |  | Картриджи для принтера [0.01 шт]; Бумага [0.01 пач] | 200h |  | 59,500 | 58,200 |  |
| 14 | 6.1 | Составление программной документации |  | 10d | 2022-06-28 14:51 | 2022-07-12 17:51 | 8SS+10d |  |  | 2022-06-15 16:08 | 2022-06-30 10:08 | 10d | 0d |  |  | Технический писатель | 80h |  | 21,500 | 21,500 |  |
| 15 | 6.2 | Составление пользовательской документации |  | 15d | 2022-07-12 17:51 | 2022-08-03 15:51 | 14 |  |  | 2022-06-30 10:08 | 2022-07-21 17:08 | 15d | 0d |  |  | Технический писатель | 120h |  | 31,500 | 31,500 |  |
| 16 | 7 | Конец проекта | milestone | 0d | 2022-08-03 15:51 | 2022-08-03 15:51 | 15 |  |  | 2022-07-21 17:08 | 2022-07-21 17:08 | 0d | 0d |  |  |  |  |  |  |  |  |
| 17 | 8 | **Профилактика оборудования** |  | 54.5d | 2022-04-26 12:00 A | 2022-07-19 16:00 |  | 43% | 31.14d | 2022-04-26 12:00 | 2022-07-19 16:00 | 54.5d | 10.61d |  |  |  | 21h | 9h | 21,000 | 21,000 | 9,000 |
| 18 | 8.1 | Профилактика оборудования 1 |  | 3h | 2022-04-26 12:00 A | 2022-04-26 16:00 A |  | 100% |  | 2022-04-26 12:00 | 2022-04-26 16:00 | 3h |  |  | start no earlier than 2022-04-26 09:00 | Специалист | 3h | 3h | 3,000 | 3,000 | 3,000 |
| 19 | 8.2 | Профилактика оборудования 2 |  | 3h | 2022-05-11 09:00 A | 2022-05-11 12:00 A |  | 100% |  | 2022-05-11 09:00 | 2022-05-11 12:00 | 3h |  |  | start no earlier than 2022-05-10 09:00 | Специалист | 3h | 3h | 3,000 | 3,000 | 3,000 |
| 20 | 8.3 | Профилактика оборудования 3 |  | 3h | 2022-05-24 12:00 A | 2022-05-24 16:00 A |  | 100% |  | 2022-05-24 12:00 | 2022-05-24 16:00 | 3h |  |  | start no earlier than 2022-05-24 09:00 | Специалист | 3h | 3h | 3,000 | 3,000 | 3,000 |
| 21 | 8.4 | Профилактика оборудования 4 |  | 3h | 2022-06-07 12:00 | 2022-06-07 16:00 |  |  |  | 2022-06-07 12:00 | 2022-06-07 16:00 | 3h | 29.45d |  | start no earlier than 2022-06-07 09:00 | Специалист | 3h |  | 3,000 | 3,000 |  |
| 22 | 8.5 | Профилактика оборудования 5 |  | 3h | 2022-06-21 12:00 | 2022-06-21 16:00 |  |  |  | 2022-06-21 12:00 | 2022-06-21 16:00 | 3h | 20.82d |  | start no earlier than 2022-06-21 09:00 | Специалист | 3h |  | 3,000 | 3,000 |  |
| 23 | 8.6 | Профилактика оборудования 6 |  | 3h | 2022-07-05 12:00 | 2022-07-05 16:00 |  |  |  | 2022-07-05 12:00 | 2022-07-05 16:00 | 3h | 11.2d |  | start no earlier than 2022-07-05 09:00 | Специалист | 3h |  | 3,000 | 3,000 |  |
| 24 | 8.7 | Профилактика оборудования 7 |  | 3h | 2022-07-19 12:00 | 2022-07-19 16:00 |  |  |  | 2022-07-19 12:00 | 2022-07-19 16:00 | 3h | 10.61d | 0d | start no earlier than 2022-07-19 09:00 | Специалист | 3h |  | 3,000 | 3,000 |  |
